# 1200V,140mΩ

How a schedule from a web Gantt chart changed from version to version. A marks actual dates.

## Version 1 (saved 2025-10-13)

| ID | WBS | Task | Duration | Start | Finish | Predecessors | Complete |
| --- | --- | --- | --- | --- | --- | --- | --- |
| 2 |  | Kick off | 6d | 2024-07-16 | 2024-07-21 |  | 100% |
| 3 |  | Design & Layout | 1d | 2024-07-16 | 2024-07-16 |  | 100% |
| 4 |  | FT 调试 | 315d | 2024-10-09 | 2025-08-19 |  | 100% |
| 5 |  | Pre-Qual | 269d | 2024-10-29 | 2025-07-24 |  | 100% |
| 6 |  | RSA | 159d | 2025-07-25 | 2025-12-30 | 5 |  |
| 7 |  | Fab Process | 31d | 2025-10-20 | 2025-11-19 |  |  |
| 8 |  | F/O(CP&Map review) | 5d | 2025-11-20 | 2025-11-24 |  |  |
| 9 |  | PKG & FT | 45d | 2025-11-25 | 2026-01-08 |  |  |
| 10 | 9 | **RE验证** | 35d | 2026-02-12 | 2026-03-18 |  |  |
| 11 |  | RE168H | 24d | 2026-02-17 | 2026-03-12 |  |  |
| 12 |  | RE504H | 14d | 2026-02-12 | 2026-02-25 |  |  |
| 13 |  | RE1008H | 21d | 2026-02-26 | 2026-03-18 |  |  |
| 14 | 10 | **Datasheet** | 14d | 2026-03-13 | 2026-03-26 |  |  |
| 15 |  | DS V0.5 | 14d | 2026-03-13 | 2026-03-26 | 11 |  |
| 16 |  | DS V1.0 | 1d | 2026-03-19 | 2026-03-19 | 13 |  |

## Version 2 (saved 2025-10-13)

Last finish 2026-03-26 → 2026-10-30 (+218d). Complete tasks 4 → 6.

Added:

| ID | Task | Duration | Start | Finish | Predecessors |
| --- | --- | --- | --- | --- | --- |
| 6 | RE168H | 9d | 2025-08-20 | 2025-08-28 |  |
| 7 | RE504H | 20d | 2025-08-28 | 2025-09-16 |  |
| 8 | RE1008H | 25d | 2025-09-16 | 2025-10-10 |  |
| 10 | **Formal Qual** | 170d | 2025-10-20 | 2026-04-07 |  |
| 11 | **1st qual lot** | 150d | 2025-10-20 | 2026-03-18 |  |
| 12 | Fab Process & F/O | 36d | 2025-10-20 | 2025-11-24 |  |
| 18 | AE验证 | 14d | 2026-01-09 | 2026-01-22 | 13 |
| 19 | Bench test(DS V0.5) | 14d | 2026-01-21 | 2026-02-03 | 15 |
| 20 | **2nd&3rd qual lot** | 149d | 2025-11-10 | 2026-04-07 |  |
| 21 | Fab Process &F/O | 36d | 2025-11-10 | 2025-12-15 |  |
| 22 | PKG & FT | 45d | 2025-12-15 | 2026-01-28 |  |
| 23 | **RE验证** | 69d | 2026-01-29 | 2026-04-07 |  |
| 24 | RE168H | 12d | 2026-01-29 | 2026-02-09 |  |
| 25 | RE504H | 24d | 2026-02-10 | 2026-03-05 |  |
| 26 | RE1008H | 33d | 2026-03-06 | 2026-04-07 |  |
| 27 | AE验证 | 14d | 2026-01-29 | 2026-02-11 | 22 |
| 28 | Bench test(DS V0.9) | 14d | 2026-02-10 | 2026-02-23 | 24 |
| 30 | RTP | 1d | 2026-04-15 | 2026-04-15 |  |

Removed: 7 Fab Process; 8 F/O(CP&Map review); 14 Datasheet; 15 DS V0.5

Changed:

| ID | Task | Start | Finish | Duration | Complete | Predecessors |
| --- | --- | --- | --- | --- | --- | --- |
| 3 | Design & Layout | 2024-07-16 → 2024-07-22 (+6d) | 2024-07-16 → 2024-08-07 (+22d) | 1d → 17d |  |  |
| 5 | **Pre-Qual** | 2024-10-29 → 2025-08-20 (+295d) | 2025-07-24 → 2025-10-10 (+78d) | 269d → 52d |  |  |
| 9 | RSA | 2025-07-25 → 2025-08-29 (+35d) | 2025-12-30 → 2026-10-30 (+304d) | 159d → 428d | 0% → 28% | 5 → 6 |
| 14 | **RE验证** | 2026-02-12 → 2026-01-09 (-34d) |  | 35d → 69d |  |  |
| 15 | RE168H | 2026-02-17 → 2026-01-09 (-39d) | 2026-03-12 → 2026-01-20 (-51d) | 24d → 12d |  |  |
| 16 | RE504H | 2026-02-12 → 2026-01-21 (-22d) | 2026-02-25 → 2026-02-13 (-12d) | 14d → 24d |  |  |
| 17 | RE1008H | 2026-02-26 → 2026-02-14 (-12d) |  | 21d → 33d |  |  |
| 29 | DS V1.0 | 2026-03-19 → 2026-04-08 (+20d) | 2026-03-19 → 2026-04-14 (+26d) | 1d → 7d |  | 17 → 26 |

## Version 3 (saved 2025-10-16)

Last finish stays 2026-10-30.

Changed:

| ID | Task | Start | Finish | Duration |
| --- | --- | --- | --- | --- |
| 10 | **Formal Qual** |  | 2026-04-07 → 2026-04-14 (+7d) | 170d → 177d |
| 17 | RE1008H | 2026-02-14 → 2026-02-16 (+2d) | 2026-03-18 → 2026-03-20 (+2d) |  |
| 20 | **2nd&3rd qual lot** |  | 2026-04-07 → 2026-04-14 (+7d) | 149d → 156d |

## Version 4 (saved 2025-11-07)

Last finish stays 2026-10-30.

Changed:

| ID | Task | Start | Finish | Duration | Complete |
| --- | --- | --- | --- | --- | --- |
| 9 | RSA |  |  |  | 28% → 37% |
| 10 | **Formal Qual** | 2025-10-20 → 2025-10-25 (+5d) | 2026-04-14 → 2026-04-24 (+10d) | 177d → 182d | 0% → 2% |
| 11 | **1st qual lot** | 2025-10-20 → 2025-10-25 (+5d) | 2026-03-18 → 2026-03-28 (+10d) | 150d → 155d | 0% → 4% |
| 12 | Fab Process & F/O | 2025-10-20 → 2025-10-25 (+5d) | 2025-11-24 → 2025-11-29 (+5d) |  | 0% → 19% |
| 13 | PKG & FT | 2025-11-25 → 2025-12-01 (+6d) | 2026-01-08 → 2026-01-14 (+6d) |  |  |
| 14 | **RE验证** | 2026-01-09 → 2026-01-19 (+10d) | 2026-03-18 → 2026-03-28 (+10d) |  |  |
| 15 | RE168H | 2026-01-09 → 2026-01-19 (+10d) | 2026-01-20 → 2026-01-30 (+10d) |  |  |
| 16 | RE504H | 2026-01-21 → 2026-01-31 (+10d) | 2026-02-13 → 2026-02-23 (+10d) |  |  |
| 17 | RE1008H | 2026-02-16 → 2026-02-24 (+8d) | 2026-03-20 → 2026-03-28 (+8d) |  |  |
| 18 | AE验证 | 2026-01-09 → 2026-01-15 (+6d) | 2026-01-22 → 2026-01-28 (+6d) |  |  |
| 19 | Bench test(DS V0.5) | 2026-01-21 → 2026-01-31 (+10d) | 2026-02-03 → 2026-02-13 (+10d) |  |  |
| 20 | **2nd&3rd qual lot** | 2025-11-10 → 2025-11-09 (-1d) | 2026-04-14 → 2026-04-24 (+10d) | 156d → 167d |  |
| 21 | Fab Process &F/O | 2025-11-10 → 2025-11-09 (-1d) | 2025-12-15 → 2025-12-14 (-1d) |  |  |
| 23 | **RE验证** | 2026-01-29 → 2026-02-02 (+4d) | 2026-04-07 → 2026-04-17 (+10d) | 69d → 75d |  |
| 24 | RE168H | 2026-01-29 → 2026-02-02 (+4d) | 2026-02-09 → 2026-02-13 (+4d) |  |  |
| 25 | RE504H | 2026-02-10 → 2026-02-16 (+6d) | 2026-03-05 → 2026-03-11 (+6d) |  |  |
| 26 | RE1008H | 2026-03-06 → 2026-03-16 (+10d) | 2026-04-07 → 2026-04-17 (+10d) |  |  |
| 28 | Bench test(DS V0.9) | 2026-02-10 → 2026-02-14 (+4d) | 2026-02-23 → 2026-02-27 (+4d) |  |  |
| 29 | DS V1.0 | 2026-04-08 → 2026-04-18 (+10d) | 2026-04-14 → 2026-04-24 (+10d) |  |  |
| 30 | RTP | 2026-04-15 → 2026-04-24 (+9d) | 2026-04-15 → 2026-04-24 (+9d) |  |  |

## Version 5 (saved 2025-11-17)

Last finish 2026-10-30 → 2026-04-15 (-198d).

Added:

| ID | Task | Duration | Start | Finish | Predecessors |
| --- | --- | --- | --- | --- | --- |
| 5 | **Pre-Qual(GB_7V,外环1ea/78 fail)** | 80d | 2025-08-20 | 2025-11-07 |  |
| 9 | **RSA_EPI:UItra2.1** | 359d | 2025-02-07 | 2026-01-31 |  |
| 10 | Fab Process | 359d | 2025-02-07 | 2026-01-31 |  |
| 11 | RE验证(补做3lots) | 42d | 2025-12-01 | 2026-01-11 |  |
| 12 | **Formal Qual(3lots)_EPI:DOE28T** | 154d | 2025-11-10 | 2026-04-12 |  |
| 20 | Bench test | 16d | 2026-01-30 | 2026-02-14 | 14 |

Removed: 5 Pre-Qual; 9 RSA; 10 Formal Qual; 11 1st qual lot; 19 Bench test(DS V0.5); 20 2nd&3rd qual lot; 21 Fab Process &F/O; 22 PKG & FT; 23 RE验证; 24 RE168H; 25 RE504H; 26 RE1008H; 27 AE验证; 28 Bench test(DS V0.9); 29 DS V1.0

Changed:

| ID | Task | Start | Finish | Duration | Predecessors |
| --- | --- | --- | --- | --- | --- |
| 8 | RE1008H |  | 2025-10-10 → 2025-11-07 (+28d) | 25d → 53d |  |
| 13 | Fab Process & F/O | 2025-10-25 → 2025-11-10 (+16d) | 2025-11-29 → 2025-12-15 (+16d) |  |  |
| 14 | PKG & FT | 2025-12-01 → 2025-12-16 (+15d) | 2026-01-14 → 2026-01-29 (+15d) |  | none → 13 |
| 15 | **RE验证** | 2026-01-19 → 2026-01-30 (+11d) | 2026-03-28 → 2026-04-12 (+15d) | 69d → 73d |  |
| 16 | RE168H | 2026-01-19 → 2026-01-30 (+11d) | 2026-01-30 → 2026-02-14 (+15d) | 12d → 16d | none → 14 |
| 17 | RE504H | 2026-01-31 → 2026-02-15 (+15d) | 2026-02-23 → 2026-03-10 (+15d) |  | none → 16 |
| 18 | RE1008H | 2026-02-24 → 2026-03-11 (+15d) | 2026-03-28 → 2026-04-12 (+15d) |  | none → 17 |
| 19 | AE验证 | 2026-01-15 → 2026-01-30 (+15d) | 2026-01-28 → 2026-02-14 (+17d) | 14d → 16d |  |
| 21 | RTP | 2026-04-24 → 2026-04-13 (-11d) | 2026-04-24 → 2026-04-15 (-9d) | 1d → 3d | none → 18 |

## Version 6 (saved 2026-01-13)

Last finish 2026-04-15 → 2026-03-26 (-20d). Complete tasks 6 → 7.

Removed: 10 Fab Process; 21 RTP

Changed:

| ID | Task | Start | Finish | Duration | Complete | Predecessors |
| --- | --- | --- | --- | --- | --- | --- |
| 9 | **RSA_EPI:UItra2.1** | 2025-02-07 → 2025-12-01 (+297d) | 2026-01-31 → 2026-01-11 (-20d) | 359d → 42d | 72% → 0% |  |
| 11 | **Formal Qual(3lots)_EPI:DOE28T** |  | 2026-04-12 → 2026-03-26 (-17d) | 154d → 137d | 4% → 28% |  |
| 13 | PKG & FT | 2025-12-16 → 2025-12-01 (-15d) | 2026-01-29 → 2026-01-12 (-17d) | 45d → 43d | 0% → 100% | 12 → none |
| 14 | **RE验证** | 2026-01-30 → 2026-01-13 (-17d) | 2026-04-12 → 2026-03-26 (-17d) |  |  |  |
| 15 | RE168H | 2026-01-30 → 2026-01-13 (-17d) | 2026-02-14 → 2026-01-28 (-17d) |  |  |  |
| 16 | RE504H | 2026-02-15 → 2026-01-29 (-17d) | 2026-03-10 → 2026-02-21 (-17d) |  |  |  |
| 17 | RE1008H | 2026-03-11 → 2026-02-22 (-17d) | 2026-04-12 → 2026-03-26 (-17d) |  |  |  |
| 18 | AE验证 | 2026-01-30 → 2026-01-29 (-1d) | 2026-02-14 → 2026-02-11 (-3d) | 16d → 14d |  | 13 → 15 |
| 19 | Bench test | 2026-01-30 → 2026-01-29 (-1d) | 2026-02-14 → 2026-02-11 (-3d) | 16d → 14d |  | 13 → 15 |

## Version 7 (saved 2026-01-20)

Last finish 2026-03-26 → 2026-06-18 (+84d).

Added:

| ID | Task | Duration | Start | Finish |
| --- | --- | --- | --- | --- |
| 11 | **Formal Qual_EPI:DOE28T** | 221d | 2025-11-10 | 2026-06-18 |
| 12 | **1st lot** | 45d | 2026-01-16 | 2026-03-01 |
| 15 | **2nd lot** | 137d | 2025-11-10 | 2026-03-26 |
| 16 | PKG & FT | 50d | 2025-12-31 | 2026-02-18 |
| 17 | **3th lot** | 154d | 2026-01-16 | 2026-06-18 |

Removed: 11 Formal Qual(3lots)_EPI:DOE28T; 14 RE验证; 15 RE168H; 16 RE504H; 18 AE验证

Changed:

| ID | Task | Start | Finish | Duration | Predecessors |
| --- | --- | --- | --- | --- | --- |
| 9 | **RSA_EPI:UItra2.1** | 2025-12-01 → 2026-01-31 (+61d) | 2026-01-11 → 2026-03-21 (+69d) | 42d → 50d |  |
| 10 | RE验证(补做3lots) | 2025-12-01 → 2026-01-31 (+61d) | 2026-01-11 → 2026-03-21 (+69d) | 42d → 50d |  |
| 13 | RE1008H | 2026-02-22 → 2026-01-16 (-37d) | 2026-03-26 → 2026-03-01 (-25d) | 33d → 45d | RE504H → none |
| 14 | Bench test | 2026-01-29 → 2026-01-19 (-10d) | 2026-02-11 → 2026-02-01 (-10d) |  | RE168H → none |
| 18 | Fab Process & F/O | 2025-11-10 → 2026-01-16 (+67d) | 2025-12-15 → 2026-02-20 (+67d) |  |  |
| 19 | PKG & FT | 2025-12-01 → 2026-02-21 (+82d) | 2026-01-12 → 2026-04-06 (+84d) | 43d → 45d | none → 18 |
