# 500V for DK

How a schedule from a web Gantt chart changed from version to version. A marks actual dates.

## Version 1 (saved 2026-01-13)

| ID | WBS | Task | Duration | Start | Finish | Predecessors | Complete |
| --- | --- | --- | --- | --- | --- | --- | --- |
| 2 |  | Kick-off | 4d | 2025-07-23 | 2025-07-26 |  | 100% |
| 3 |  | Design & Layout；EPI | 4d | 2025-07-27 | 2025-07-30 | 2 | 100% |
| 4 |  | T/O & MaskShip；Flow Setup | 4d | 2025-07-31 | 2025-08-03 | 3 | 100% |
| 5 |  | Fab Process | 25d | 2025-08-04 | 2025-08-28 | 4 | 100% |
| 6 |  | CP Test HW &CP test&WLRE | 15d | 2025-08-29 | 2025-09-12 | 5 | 100% |
| 7 |  | Assembly+FT Test | 50d | 2025-09-13 | 2025-11-01 | 6 | 62% |
| 8 |  | Datasheet/Dy-Idsat | 14d | 2025-11-02 | 2025-11-15 | 7 |  |
| 9 |  | AE Roadtest | 9d | 2025-11-02 | 2025-11-10 | 7 |  |
| 10 | 9 | **RE** | 70d | 2025-11-07 | 2026-01-15 |  |  |
| 11 |  | RE168h (Device) | 11d | 2025-11-07 | 2025-11-17 |  |  |
| 12 |  | RE500h (Device) | 25d | 2025-11-07 | 2025-12-01 |  |  |
| 13 |  | RE1000h (Device) | 70d | 2025-11-07 | 2026-01-15 |  |  |

## Version 2 (saved 2026-01-13)

Last finish 2026-01-15 → 2026-05-04 (+109d). Complete tasks 5 → 10.

Added:

| ID | Task | Duration | Start | Finish |
| --- | --- | --- | --- | --- |
| 2 | 500V NPI进度 | 177d | 2025-07-23 | 2026-01-15 |
| 9 | **RB小管FT测试漏电** | 126d | 2025-12-30 | 2026-05-04 |
| 10 | RB小管漏电--封装验证 | 27d | 2025-12-30 | 2026-01-25 |
| 11 | RB小管漏电--小管位置设计 | 110d | 2026-01-15 | 2026-05-04 |
| 12 | **PI空洞** | 57d | 2025-11-18 | 2026-01-13 |
| 13 | FA分析PI空洞 | 23d | 2025-11-18 | 2025-12-10 |
| 14 | 恶化试验减小Space可复现异常 | 26d | 2025-12-11 | 2026-01-05 |
| 15 | Space加大到5um,2片wafer都没有异常 | 8d | 2026-01-06 | 2026-01-13 |
| 17 | Datasheet测试 | 5d | 2026-01-12 | 2026-01-16 |
| 19 | AE测第二批Roadtest，关注Idsat，dRon | 12d | 2026-01-12 | 2026-01-23 |
| 24 | **RE** | 45d | 2026-01-12 | 2026-02-25 |
| 25 | RE168h | 8d | 2026-01-14 | 2026-01-21 |
| 26 | RE500h | 22d | 2026-01-14 | 2026-02-04 |
| 27 | RE1000h | 43d | 2026-01-14 | 2026-02-25 |
| 28 | CRE动态测试Idsat,dRon | 12d | 2026-01-12 | 2026-01-23 |

Changed:

| ID | Task | Finish | Duration | Complete |
| --- | --- | --- | --- | --- |
| 8 | Assembly+FT Test |  |  | 62% → 100% |
| 16 | Datasheet/Dy-Idsat | 2025-11-15 → 2025-11-10 (-5d) | 14d → 9d |  |
| 18 | AE Roadtest | 2025-11-10 → 2025-11-02 (-8d) | 9d → 1d | 0% → 100% |
