# 500V for DK

How a schedule from a web Gantt chart changed from version to version. A marks actual dates.

## Version 1 (saved 2025-10-13)

| ID | WBS | Task | Duration | Start | Finish | Predecessors | Complete |
| --- | --- | --- | --- | --- | --- | --- | --- |
| 2 |  | Kick-off | 4d | 2025-07-23 | 2025-07-26 |  | 100% |
| 3 |  | Design & Layout；EPI | 4d | 2025-07-27 | 2025-07-30 | 2 | 100% |
| 4 |  | T/O & MaskShip；Flow Setup | 4d | 2025-07-31 | 2025-08-03 | 3 | 100% |
| 5 |  | Fab Process | 25d | 2025-08-04 | 2025-08-28 | 4 | 100% |
| 6 |  | CP Test HW &CP test&WLRE | 15d | 2025-08-29 | 2025-09-12 | 5 | 100% |
| 7 |  | Assembly+FT Test | 50d | 2025-09-13 | 2025-11-01 | 6 | 62% |
| 8 |  | Datasheet/Dy-Idsat | 15d | 2025-11-02 | 2025-11-16 | 7 |  |
| 9 |  | AE Roadtest | 10d | 2025-11-02 | 2025-11-11 | 7 |  |
| 10 | 9 | **RE** | 70d | 2025-11-07 | 2026-01-15 |  |  |
| 11 |  | RE168h (Device) | 11d | 2025-11-07 | 2025-11-17 |  |  |
| 12 |  | RE500h (Device) | 25d | 2025-11-07 | 2025-12-01 |  |  |
| 13 |  | RE1000h (Device) | 70d | 2025-11-07 | 2026-01-15 |  |  |

## Version 2 (saved 2025-10-14)

Last finish stays 2026-01-15.

Changed:

| ID | Task | Finish | Duration |
| --- | --- | --- | --- |
| 8 | Datasheet/Dy-Idsat | 2025-11-16 → 2025-11-15 (-1d) | 15d → 14d |
| 9 | AE Roadtest | 2025-11-11 → 2025-11-10 (-1d) | 10d → 9d |

## Version 3 (saved 2025-10-15)

Last finish stays 2026-01-15.

Added:

| ID | Task | Duration | Start | Finish |
| --- | --- | --- | --- | --- |
| 2 | Kick off | 4d | 2025-07-23 | 2025-07-26 |

Removed: 2 Kick-off

Changed:

| ID | Task | Predecessors |
| --- | --- | --- |
| 3 | Design & Layout；EPI | Kick-off → 2 |

## Version 4 (saved 2026-01-27)

Last finish stays 2026-01-15.

Added:

| ID | Task | Duration | Start | Finish |
| --- | --- | --- | --- | --- |
| 2 | Kick-off | 4d | 2025-07-23 | 2025-07-26 |

Removed: 2 Kick off

Changed:

| ID | Task | Predecessors |
| --- | --- | --- |
| 3 | Design & Layout；EPI | Kick off → 2 |
