# G3.0大功率 Device B

How a schedule from a web Gantt chart changed from version to version. A marks actual dates.

## Version 1 (saved 2025-11-17)

| ID | WBS | Task | Duration | Start | Finish | Predecessors | Complete |
| --- | --- | --- | --- | --- | --- | --- | --- |
| 2 |  | Kick off | 5d | 2024-06-06 | 2024-06-10 |  | 100% |
| 3 |  | MPW 摸底 | 134d | 2024-06-11 | 2024-10-22 | 2 | 100% |
| 4 | 3 | **SPW** | 367d | 2025-01-01 | 2026-01-02 |  | 48% |
| 5 |  | Design & Layout | 4d | 2025-01-01 | 2025-01-04 |  |  |
| 6 | 3.2 | **Formal Qual** | 177d | 2025-07-10 | 2026-01-02 |  | 48% |
| 7 | 3.2.1 | **1st Qaul lot** | 138d | 2025-07-10 | 2025-11-24 |  | 76% |
| 8 |  | Process | 33d | 2025-07-10 | 2025-08-11 |  | 100% |
| 9 |  | PKG | 35d | 2025-08-12 | 2025-09-15 | 8 | 100% |
| 10 |  | FT | 10d | 2025-09-16 | 2025-09-25 | 9 | 100% |
| 11 | 3.2.1.4 | **RE验证** | 57d | 2025-09-26 | 2025-11-21 |  | 72% |
| 12 |  | RE168H | 14d | 2025-09-26 | 2025-10-09 | 10 | 100% |
| 13 |  | RE500H | 19d | 2025-10-10 | 2025-10-28 | 12 | 100% |
| 14 |  | RE1008H | 24d | 2025-10-29 | 2025-11-21 | 13 | 33% |
| 15 |  | AE验证 | 46d | 2025-10-10 | 2025-11-24 | 12 | 30% |
| 16 |  | Bench test(DS V0.5) | 20d | 2025-10-10 | 2025-10-29 | 12 | 100% |
| 17 | 3.2.2 | **2nd&3rd Qual lot** | 68d | 2025-10-27 | 2026-01-02 |  | 4% |
| 18 |  | FT | 5d | 2025-10-27 | 2025-10-31 |  | 100% |
| 19 | 3.2.2.2 | **RE 验证** | 60d | 2025-11-01 | 2025-12-30 | 18 |  |
| 20 |  | RE168H | 17d | 2025-11-01 | 2025-11-17 | 18 |  |
| 21 |  | RE500H | 19d | 2025-11-18 | 2025-12-06 | 20 |  |
| 22 |  | RE1008H | 24d | 2025-12-07 | 2025-12-30 | 21 |  |
| 23 |  | AE验证 | 46d | 2025-11-18 | 2026-01-02 | 20 |  |
| 24 |  | Bench test(DS V0.9) | 15d | 2025-11-18 | 2025-12-02 | 20 |  |
| 25 |  | Ramp up | 90d | 2025-12-31 | 2026-03-30 | 22 |  |
| 26 |  | DS V1.0 | 3d | 2026-03-31 | 2026-04-02 | 25 |  |
| 27 |  | 项目结案 | 1d | 2026-04-03 | 2026-04-03 | 26 |  |

## Version 2 (saved 2025-12-01)

Last finish 2026-04-03 → 2026-04-10 (+7d). Complete tasks 9 → 13.

Removed: 23 AE验证

Changed:

| ID | Task | Start | Finish | Duration | Complete | Predecessors |
| --- | --- | --- | --- | --- | --- | --- |
| 4 | **SPW** |  | 2026-01-02 → 2026-01-06 (+4d) | 367d → 371d | 48% → 85% |  |
| 6 | **Formal Qual** |  | 2026-01-02 → 2026-01-06 (+4d) | 177d → 181d | 48% → 86% |  |
| 7 | **1st Qaul lot** |  |  |  | 76% → 100% |  |
| 11 | **RE验证** |  |  |  | 72% → 100% |  |
| 14 | RE1008H |  |  |  | 33% → 100% |  |
| 15 | AE验证 |  |  |  | 30% → 100% |  |
| 17 | **2nd&3rd Qual lot** |  | 2026-01-02 → 2026-01-06 (+4d) | 68d → 72d | 4% → 57% |  |
| 19 | **RE 验证** |  | 2025-12-30 → 2026-01-06 (+7d) | 60d → 67d | 0% → 36% |  |
| 20 | RE168H |  | 2025-11-17 → 2025-11-24 (+7d) | 17d → 24d | 0% → 100% |  |
| 21 | RE500H | 2025-11-18 → 2025-11-25 (+7d) | 2025-12-06 → 2025-12-13 (+7d) |  |  |  |
| 22 | RE1008H | 2025-12-07 → 2025-12-14 (+7d) | 2025-12-30 → 2026-01-06 (+7d) |  |  |  |
| 23 | Bench test(DS V0.9) | 2025-11-18 → 2025-11-01 (-17d) | 2025-12-02 → 2025-11-27 (-5d) | 15d → 27d | 0% → 100% | 20 → 18 |
| 24 | Ramp up | 2025-12-31 → 2026-01-07 (+7d) | 2026-03-30 → 2026-04-06 (+7d) |  |  |  |
| 25 | DS V1.0 | 2026-03-31 → 2026-04-07 (+7d) | 2026-04-02 → 2026-04-09 (+7d) |  |  |  |
| 26 | 项目结案 | 2026-04-03 → 2026-04-10 (+7d) | 2026-04-03 → 2026-04-10 (+7d) |  |  |  |

## Version 3 (saved 2025-12-15)

Last finish 2026-04-10 → 2026-04-14 (+4d). Complete tasks 13 → 14.

Added:

| ID | Task | Duration | Start | Finish | Predecessors |
| --- | --- | --- | --- | --- | --- |
| 21 | RE504H | 23d | 2025-11-25 | 2025-12-17 | 20 |

Removed: 21 RE500H

Changed:

| ID | Task | Start | Finish | Duration | Complete | Predecessors |
| --- | --- | --- | --- | --- | --- | --- |
| 4 | **SPW** |  | 2026-01-06 → 2026-01-10 (+4d) | 371d → 375d | 85% → 91% |  |
| 6 | **Formal Qual** |  | 2026-01-06 → 2026-01-10 (+4d) | 181d → 185d | 86% → 92% |  |
| 17 | **2nd&3rd Qual lot** |  | 2026-01-06 → 2026-01-10 (+4d) | 72d → 76d | 57% → 77% |  |
| 19 | **RE 验证** |  | 2026-01-06 → 2026-01-10 (+4d) | 67d → 71d | 36% → 67% |  |
| 22 | RE1008H | 2025-12-14 → 2025-12-18 (+4d) | 2026-01-06 → 2026-01-10 (+4d) |  |  | RE500H → 21 |
| 24 | Ramp up | 2026-01-07 → 2026-01-11 (+4d) | 2026-04-06 → 2026-04-10 (+4d) |  |  |  |
| 25 | DS V1.0 | 2026-04-07 → 2026-04-11 (+4d) | 2026-04-09 → 2026-04-13 (+4d) |  |  |  |
| 26 | 项目结案 | 2026-04-10 → 2026-04-14 (+4d) | 2026-04-10 → 2026-04-14 (+4d) |  |  |  |

## Version 4 (saved 2025-12-22)

Last finish stays 2026-04-14.

Changed:

| ID | Task | Complete |
| --- | --- | --- |
| 17 | **2nd&3rd Qual lot** | 77% → 76% |
| 19 | **RE 验证** | 67% → 65% |

## Version 5 (saved 2025-12-29)

Last finish 2026-04-14 → 2026-03-04 (-41d).

Added:

| ID | Task | Duration | Start | Finish |
| --- | --- | --- | --- | --- |
| 24 | 1st RSA | 62d | 2025-12-29 | 2026-02-28 |

Removed: 24 Ramp up

Changed:

| ID | Task | Start | Finish | Duration | Complete | Predecessors |
| --- | --- | --- | --- | --- | --- | --- |
| 4 | **SPW** |  | 2026-01-10 → 2026-01-11 (+1d) | 375d → 376d | 91% → 95% |  |
| 6 | **Formal Qual** |  | 2026-01-10 → 2026-01-11 (+1d) | 185d → 186d | 92% → 96% |  |
| 17 | **2nd&3rd Qual lot** |  | 2026-01-10 → 2026-01-11 (+1d) | 76d → 77d | 76% → 87% |  |
| 19 | **RE 验证** |  |  |  | 65% → 86% |  |
| 22 | RE1008H |  |  |  | 0% → 58% |  |
| 23 | Bench test(DS V0.9) | 2025-11-01 → 2026-01-11 (+71d) | 2025-11-27 → 2026-01-11 (+45d) | 27d → 1d |  | 18 → 22 |
| 25 | DS V1.0 | 2026-04-11 → 2026-03-01 (-41d) | 2026-04-13 → 2026-03-03 (-41d) |  |  | Ramp up → 24 |
| 26 | 项目结案 | 2026-04-14 → 2026-03-04 (-41d) | 2026-04-14 → 2026-03-04 (-41d) |  |  |  |

## Version 6 (saved 2026-01-13)

Last finish stays 2026-03-04. Complete tasks 14 → 16.

Changed:

| ID | Task | Finish | Duration | Complete |
| --- | --- | --- | --- | --- |
| 4 | **SPW** | 2026-01-11 → 2026-01-15 (+4d) | 376d → 380d | 95% → 100% |
| 5 | Design & Layout |  |  | 0% → 100% |
| 6 | **Formal Qual** | 2026-01-11 → 2026-01-15 (+4d) | 186d → 190d | 96% → 100% |
| 17 | **2nd&3rd Qual lot** | 2026-01-11 → 2026-01-15 (+4d) | 77d → 81d | 87% → 100% |
| 19 | **RE 验证** |  |  | 86% → 100% |
| 22 | RE1008H |  |  | 58% → 100% |
| 23 | Bench test(DS V0.9) | 2026-01-11 → 2026-01-15 (+4d) | 1d → 5d |  |
