# ESD 改版

How a schedule from a web Gantt chart changed from version to version. A marks actual dates.

## Version 1 (saved 2025-11-03)

| ID | Task | Duration | Start | Finish |
| --- | --- | --- | --- | --- |
| 2 | Kickoff | 1d | 2025-11-03 | 2025-11-03 |

## Version 2 (saved 2025-11-03)

Last finish 2025-11-03 → 2026-01-30 (+88d). Complete tasks 0 → 1.

Added:

| ID | Task | Duration | Start | Finish | Predecessors |
| --- | --- | --- | --- | --- | --- |
| 3 | Mask in | 12d | 2025-10-30 | 2025-11-10 |  |
| 4 | **Qual. lot** | 73d | 2025-11-11 | 2026-01-22 |  |
| 5 | WAFER PROCESS | 28d | 2025-11-11 | 2025-12-08 |  |
| 6 | PKG+FT | 31d | 2025-12-09 | 2026-01-08 | 5 |
| 7 | Bench test | 14d | 2026-01-09 | 2026-01-22 | 6 |
| 8 | RE168 | 14d | 2026-01-09 | 2026-01-22 | 6 |
| 9 | AE 验证 | 14d | 2026-01-09 | 2026-01-22 | 6 |
| 10 | RFS meeting | 9d | 2026-01-22 | 2026-01-30 |  |

Changed:

| ID | Task | Start | Finish | Complete |
| --- | --- | --- | --- | --- |
| 2 | Kickoff | 2025-11-03 → 2025-10-28 (-6d) | 2025-11-03 → 2025-10-28 (-6d) | 0% → 100% |

## Version 3 (saved 2025-12-01)

Last finish stays 2026-01-30. Complete tasks 1 → 2.

Changed:

| ID | Task | Complete |
| --- | --- | --- |
| 3 | Mask in | 0% → 100% |

## Version 4 (saved 2025-12-08)

Last finish 2026-01-30 → 2026-02-13 (+14d).

Changed:

| ID | Task | Start | Finish | Duration |
| --- | --- | --- | --- | --- |
| 3 | Mask in |  | 2025-11-10 → 2025-11-17 (+7d) | 12d → 19d |
| 4 | **Qual. lot** | 2025-11-11 → 2025-11-19 (+8d) | 2026-01-22 → 2026-02-13 (+22d) | 73d → 87d |
| 5 | WAFER PROCESS | 2025-11-11 → 2025-11-19 (+8d) | 2025-12-08 → 2025-12-30 (+22d) | 28d → 42d |
| 6 | PKG+FT | 2025-12-09 → 2025-12-31 (+22d) | 2026-01-08 → 2026-01-30 (+22d) |  |
| 7 | Bench test | 2026-01-09 → 2026-01-31 (+22d) | 2026-01-22 → 2026-02-13 (+22d) |  |
| 8 | RE168 | 2026-01-09 → 2026-01-31 (+22d) | 2026-01-22 → 2026-02-13 (+22d) |  |
| 9 | AE 验证 | 2026-01-09 → 2026-01-31 (+22d) | 2026-01-22 → 2026-02-13 (+22d) |  |

## Version 5 (saved 2025-12-15)

Last finish 2026-02-13 → 2026-02-05 (-8d).

Changed:

| ID | Task | Start | Finish | Duration |
| --- | --- | --- | --- | --- |
| 4 | **Qual. lot** |  | 2026-02-13 → 2026-02-05 (-8d) | 87d → 79d |
| 5 | WAFER PROCESS |  | 2025-12-30 → 2025-12-22 (-8d) | 42d → 34d |
| 6 | PKG+FT | 2025-12-31 → 2025-12-23 (-8d) | 2026-01-30 → 2026-01-22 (-8d) |  |
| 7 | Bench test | 2026-01-31 → 2026-01-23 (-8d) | 2026-02-13 → 2026-02-05 (-8d) |  |
| 8 | RE168 | 2026-01-31 → 2026-01-23 (-8d) | 2026-02-13 → 2026-02-05 (-8d) |  |
| 9 | AE 验证 | 2026-01-31 → 2026-01-23 (-8d) | 2026-02-13 → 2026-02-05 (-8d) |  |

## Version 6 (saved 2025-12-22)

Last finish stays 2026-02-05. Complete tasks 2 → 3.

Changed:

| ID | Task | Complete |
| --- | --- | --- |
| 5 | WAFER PROCESS | 0% → 100% |

## Version 7 (saved 2026-01-05)

Last finish stays 2026-02-05.

Changed:

| ID | Task | Complete |
| --- | --- | --- |
| 4 | **Qual. lot** | 0% → 32% |

## Version 8 (saved 2026-01-13)

Last finish 2026-02-05 → 2026-02-14 (+9d).

Changed:

| ID | Task | Start | Finish | Predecessors |
| --- | --- | --- | --- | --- |
| 10 | RFS meeting | 2026-01-22 → 2026-02-06 (+15d) | 2026-01-30 → 2026-02-14 (+15d) | none → 8 |

## Version 9 (saved 2026-01-23)

Last finish 2026-02-14 → 2026-03-24 (+38d).

Added:

| ID | Task | Duration | Start | Finish | Predecessors |
| --- | --- | --- | --- | --- | --- |
| 8 | RE | 14d | 2026-02-09 | 2026-02-22 | 6 |
| 9 | ESD | 14d | 2026-02-09 | 2026-02-22 | 6 |

Removed: 8 RE168

Changed:

| ID | Task | Start | Finish | Duration | Complete | Predecessors |
| --- | --- | --- | --- | --- | --- | --- |
| 4 | **Qual. lot** |  | 2026-02-05 → 2026-03-24 (+47d) | 79d → 126d | 32% → 20% |  |
| 6 | PKG+FT |  | 2026-01-22 → 2026-02-08 (+17d) | 31d → 48d |  | 5 → none |
| 7 | Bench test | 2026-01-23 → 2026-02-09 (+17d) | 2026-02-05 → 2026-02-22 (+17d) |  |  |  |
| 10 | AE 验证 | 2026-01-23 → 2026-02-09 (+17d) | 2026-02-05 → 2026-03-24 (+47d) | 14d → 44d |  |  |
| 11 | RFS meeting | 2026-02-06 → 2026-02-23 (+17d) | 2026-02-14 → 2026-03-03 (+17d) |  |  | RE168 → 9 |
