# FOPLP 面板式封装

How a schedule from a web Gantt chart changed from version to version. A marks actual dates.

## Version 1 (saved 2025-10-28)

| ID | WBS | Task | Duration | Start | Finish | Predecessors | Complete |
| --- | --- | --- | --- | --- | --- | --- | --- |
| 2 |  | FOPLP 8X9 Design | 6d | 2025-06-13 | 2025-06-18 |  | 100% |
| 3 |  | 2-FM+2M RDL wafer | 9d | 2025-07-18 | 2025-07-26 |  | 100% |
| 4 |  | 1st Eng sample | 45d | 2025-08-04 | 2025-09-17 |  | 100% |
| 5 | 4 | **RE 摸底** | 70d | 2025-09-18 | 2025-11-26 |  | 33% |
| 6 |  | Pre-con/MSL | 33d | 2025-09-18 | 2025-10-20 | 4 | 100% |
| 7 |  | 1st TC200 | 9d | 2025-10-20 | 2025-10-28 |  |  |
| 8 |  | 1st TC500 | 21d | 2025-10-21 | 2025-11-10 |  |  |
| 9 |  | 1st TC1000 | 37d | 2025-10-21 | 2025-11-26 |  |  |
| 10 |  | Pre-qual wafer W/S | 32d | 2025-10-10 | 2025-11-10 |  |  |
| 11 |  | FOPLP 8X8 design | 15d | 2025-10-13 | 2025-10-27 |  | 100% |
| 12 |  | FOPLP 8X8 1st ES | 36d | 2025-10-28 | 2025-12-02 |  |  |
| 13 | 8 | **Pre-qual 1 lot** | 30d | 2025-12-18 | 2026-01-16 |  |  |
| 14 |  | TC200 | 7d | 2025-12-18 | 2025-12-24 |  |  |
| 15 |  | TC500 | 30d | 2025-12-18 | 2026-01-16 |  |  |
| 16 |  | Formal Qual W/S | 32d | 2025-10-27 | 2025-11-27 |  |  |
| 17 | 10 | **Assembly (3-FM+2M BSL)** | 95d | 2025-11-28 | 2026-03-02 | 16 |  |
| 18 |  | RDL+CP | 30d | 2025-11-28 | 2025-12-27 |  |  |
| 19 |  | FOPLP 8X8 封装 | 45d | 2026-01-17 | 2026-03-02 | 15 |  |
| 20 | 11 | **Formal qual 3 Lot** | 44d | 2026-03-03 | 2026-04-15 |  |  |
| 21 |  | TC200 | 7d | 2026-03-03 | 2026-03-09 | 19 |  |
| 22 |  | TC500 | 30d | 2026-03-05 | 2026-04-03 |  |  |
| 23 |  | TC1000 | 42d | 2026-03-05 | 2026-04-15 |  |  |
| 24 |  | FOPLP 8X8 Release | 2d | 2026-04-16 | 2026-04-17 | 23 |  |

## Version 2 (saved 2025-10-28)

Last finish 2026-04-17 → 2026-04-20 (+3d). Complete tasks 5 → 10.

Added:

| ID | Task | Duration | Start | Finish | Predecessors |
| --- | --- | --- | --- | --- | --- |
| 12 | Wafer process | 22d | 2025-10-20 | 2025-11-10 |  |
| 13 | FOPLP 8X8 ES Assembly | 36d | 2025-11-11 | 2025-12-16 | 12 |
| 16 | **Formal Qual.** | 171d | 2025-10-27 | 2026-04-15 |  |
| 17 | Wafer process | 32d | 2025-10-27 | 2025-11-27 |  |
| 21 | **RE Qual.(3lots)** | 45d | 2026-03-02 | 2026-04-15 |  |
| 25 | RTP | 5d | 2026-04-16 | 2026-04-20 | 24 |

Removed: 10 Pre-qual wafer W/S; 12 FOPLP 8X8 1st ES; 16 Formal Qual W/S; 20 Formal qual 3 Lot; 24 FOPLP 8X8 Release

Changed:

| ID | Task | Start | Finish | Duration | Complete | Predecessors |
| --- | --- | --- | --- | --- | --- | --- |
| 5 | **RE 摸底** |  |  |  | 33% → 42% |  |
| 7 | 1st TC200 |  |  |  | 0% → 100% |  |
| 10 | **Pre-qual 1 lot** | 2025-12-18 → 2025-10-13 (-66d) | 2026-01-16 → 2026-01-15 (-1d) | 30d → 95d | 0% → 100% |  |
| 11 | FOPLP 8X8 design |  | 2025-10-27 → 2025-10-24 (-3d) | 15d → 12d |  |  |
| 14 | TC200 | 2025-12-18 → 2025-12-17 (-1d) | 2025-12-24 → 2025-12-30 (+6d) | 7d → 14d | 0% → 100% | none → 13 |
| 15 | TC500 | 2025-12-18 → 2025-12-17 (-1d) | 2026-01-16 → 2026-01-15 (-1d) |  | 0% → 100% | none → 13 |
| 18 | **Assembly (3-FM+2M BSL)** |  | 2026-03-02 → 2026-03-01 (-1d) | 95d → 94d |  | Formal Qual W/S → none |
| 20 | FOPLP 8X8 封装 | 2026-01-17 → 2026-01-16 (-1d) | 2026-03-02 → 2026-03-01 (-1d) |  |  |  |
| 22 | TC200 | 2026-03-03 → 2026-03-02 (-1d) | 2026-03-09 → 2026-03-15 (+6d) | 7d → 14d |  |  |
