# FOPLP 面板式封装

How a schedule from a web Gantt chart changed from version to version. A marks actual dates.

## Version 1 (saved 2026-01-23)

| ID | WBS | Task | Duration | Start | Finish | Predecessors | Complete |
| --- | --- | --- | --- | --- | --- | --- | --- |
| 2 |  | Kickoff | 45d | 2025-12-08 | 2026-01-21 |  | 100% |
| 3 | 2 | **Process setup** | 177d | 2025-11-22 | 2026-05-17 |  | 38% |
| 4 |  | Wafer process | 31d | 2025-11-22 | 2025-12-22 |  | 100% |
| 5 |  | Design fix | 29d | 2025-12-08 | 2026-01-05 |  | 100% |
| 6 |  | FOPLP sample | 49d | 2026-01-16 | 2026-03-05 |  |  |
| 7 |  | RE (THB 1000H) | 50d | 2026-03-29 | 2026-05-17 |  |  |
| 8 | 3 | **Pre-qual lot** | 138d | 2026-04-17 | 2026-09-01 |  |  |
| 9 |  | RDL Wafer | 31d | 2026-04-17 | 2026-05-17 |  |  |
| 10 |  | FOPLP | 36d | 2026-05-18 | 2026-06-22 | 9 |  |
| 11 |  | FT | 8d | 2026-06-23 | 2026-06-30 | 10 |  |
| 12 |  | RE | 63d | 2026-07-01 | 2026-09-01 | 11 |  |
| 13 | 4 | **Formal Qual.** | 152d | 2026-09-02 | 2027-01-31 | 12 |  |
| 14 |  | RDL Wafer | 32d | 2026-09-02 | 2026-10-03 |  |  |
| 15 |  | FOPLP | 44d | 2026-10-04 | 2026-11-16 | 14 |  |
| 16 |  | FT | 5d | 2026-11-17 | 2026-11-21 | 15 |  |
| 17 |  | RE | 71d | 2026-11-22 | 2027-01-31 | 16 |  |

## Version 2 (saved 2026-01-26)

Last finish 2027-01-31 → 2026-12-31 (-31d).

Changed:

| ID | Task | Finish | Duration |
| --- | --- | --- | --- |
| 13 | **Formal Qual.** | 2027-01-31 → 2026-12-31 (-31d) | 152d → 121d |
| 17 | RE | 2027-01-31 → 2026-12-31 (-31d) | 71d → 40d |
