# FOPLP 面板式封装

How a schedule from a web Gantt chart changed from version to version. A marks actual dates.

## Version 1 (saved 2025-11-10)

| ID | WBS | Task | Duration | Start | Finish | Predecessors | Complete |
| --- | --- | --- | --- | --- | --- | --- | --- |
| 2 |  | FOPLP 8X9 Design | 6d | 2025-06-13 | 2025-06-18 |  | 100% |
| 3 |  | 2-FM+2M RDL wafer | 9d | 2025-07-18 | 2025-07-26 |  | 100% |
| 4 |  | 1st Eng sample | 45d | 2025-08-04 | 2025-09-17 |  | 100% |
| 5 | 4 | **RE 摸底** | 70d | 2025-09-18 | 2025-11-26 |  | 42% |
| 6 |  | Pre-con/MSL | 33d | 2025-09-18 | 2025-10-20 | 4 | 100% |
| 7 |  | 1st TC200 | 9d | 2025-10-20 | 2025-10-28 |  | 100% |
| 8 |  | 1st TC500 | 21d | 2025-10-21 | 2025-11-10 |  |  |
| 9 |  | 1st TC1000 | 37d | 2025-10-21 | 2025-11-26 |  |  |
| 10 | 5 | **Pre-qual 1 lot** | 95d | 2025-10-13 | 2026-01-15 |  | 100% |
| 11 |  | FOPLP 8X8 design | 12d | 2025-10-13 | 2025-10-24 |  | 100% |
| 12 |  | Wafer process | 22d | 2025-10-20 | 2025-11-10 |  | 100% |
| 13 |  | FOPLP 8X8 ES Assembly | 36d | 2025-11-11 | 2025-12-16 | 12 | 100% |
| 14 |  | TC200 | 14d | 2025-12-17 | 2025-12-30 | 13 | 100% |
| 15 |  | TC500 | 30d | 2025-12-17 | 2026-01-15 | 13 | 100% |
| 16 | 6 | **Formal Qual.** | 171d | 2025-10-27 | 2026-04-15 |  |  |
| 17 |  | Wafer process | 32d | 2025-10-27 | 2025-11-27 |  |  |
| 18 | 6.2 | **Assembly (3-FM+2M BSL)** | 94d | 2025-11-28 | 2026-03-01 |  |  |
| 19 |  | RDL+CP | 30d | 2025-11-28 | 2025-12-27 |  |  |
| 20 |  | FOPLP 8X8 封装 | 45d | 2026-01-16 | 2026-03-01 | 15 |  |
| 21 | 6.3 | **RE Qual.(3lots)** | 45d | 2026-03-02 | 2026-04-15 |  |  |
| 22 |  | TC200 | 14d | 2026-03-02 | 2026-03-15 | 20 |  |
| 23 |  | TC500 | 30d | 2026-03-05 | 2026-04-03 |  |  |
| 24 |  | TC1000 | 42d | 2026-03-05 | 2026-04-15 |  |  |
| 25 |  | RTP | 5d | 2026-04-16 | 2026-04-20 | 24 |  |

## Version 2 (saved 2025-11-10)

Last finish stays 2026-04-20.

Changed:

| ID | Task | Start | Finish | Duration |
| --- | --- | --- | --- | --- |
| 10 | **Pre-qual 1 lot** |  | 2026-01-15 → 2026-01-21 (+6d) | 95d → 101d |
| 13 | FOPLP 8X8 ES Assembly |  | 2025-12-16 → 2025-12-22 (+6d) | 36d → 42d |
| 14 | TC200 | 2025-12-17 → 2025-12-23 (+6d) | 2025-12-30 → 2026-01-05 (+6d) |  |
| 15 | TC500 | 2025-12-17 → 2025-12-23 (+6d) | 2026-01-15 → 2026-01-21 (+6d) |  |
| 18 | **Assembly (3-FM+2M BSL)** |  | 2026-03-01 → 2026-03-07 (+6d) | 94d → 100d |
| 20 | FOPLP 8X8 封装 | 2026-01-16 → 2026-01-22 (+6d) | 2026-03-01 → 2026-03-07 (+6d) |  |
| 21 | **RE Qual.(3lots)** | 2026-03-02 → 2026-03-05 (+3d) |  | 45d → 42d |
| 22 | TC200 | 2026-03-02 → 2026-03-08 (+6d) | 2026-03-15 → 2026-03-21 (+6d) |  |

## Version 3 (saved 2025-11-10)

Last finish stays 2026-04-20.

Changed:

| ID | Task | Start | Finish | Duration |
| --- | --- | --- | --- | --- |
| 10 | **Pre-qual 1 lot** |  | 2026-01-21 → 2025-12-22 (-30d) | 101d → 71d |
| 13 | FOPLP 8X8 ES Assembly |  | 2025-12-22 → 2025-11-22 (-30d) | 42d → 12d |
| 14 | TC200 | 2025-12-23 → 2025-11-23 (-30d) | 2026-01-05 → 2025-12-06 (-30d) |  |
| 15 | TC500 | 2025-12-23 → 2025-11-23 (-30d) | 2026-01-21 → 2025-12-22 (-30d) |  |
| 18 | **Assembly (3-FM+2M BSL)** |  | 2026-03-07 → 2026-02-05 (-30d) | 100d → 70d |
| 20 | FOPLP 8X8 封装 | 2026-01-22 → 2025-12-23 (-30d) | 2026-03-07 → 2026-02-05 (-30d) |  |
| 21 | **RE Qual.(3lots)** | 2026-03-05 → 2026-02-06 (-27d) |  | 42d → 69d |
| 22 | TC200 | 2026-03-08 → 2026-02-06 (-30d) | 2026-03-21 → 2026-02-19 (-30d) |  |

## Version 4 (saved 2025-11-10)

Last finish stays 2026-04-20.

Changed:

| ID | Task | Start | Finish | Duration |
| --- | --- | --- | --- | --- |
| 10 | **Pre-qual 1 lot** |  | 2025-12-22 → 2026-01-21 (+30d) | 71d → 101d |
| 13 | FOPLP 8X8 ES Assembly |  | 2025-11-22 → 2025-12-22 (+30d) | 12d → 42d |
| 14 | TC200 | 2025-11-23 → 2025-12-23 (+30d) | 2025-12-06 → 2026-01-05 (+30d) |  |
| 15 | TC500 | 2025-11-23 → 2025-12-23 (+30d) | 2025-12-22 → 2026-01-21 (+30d) |  |
| 18 | **Assembly (3-FM+2M BSL)** |  | 2026-02-05 → 2026-03-07 (+30d) | 70d → 100d |
| 20 | FOPLP 8X8 封装 | 2025-12-23 → 2026-01-22 (+30d) | 2026-02-05 → 2026-03-07 (+30d) |  |
| 21 | **RE Qual.(3lots)** | 2026-02-06 → 2026-03-05 (+27d) |  | 69d → 42d |
| 22 | TC200 | 2026-02-06 → 2026-03-08 (+30d) | 2026-02-19 → 2026-03-21 (+30d) |  |
