# FOPLP 面板式封装

How a schedule from a web Gantt chart changed from version to version. A marks actual dates.

## Version 1 (saved 2025-10-13)

| ID | WBS | Task | Duration | Start | Finish | Predecessors | Complete |
| --- | --- | --- | --- | --- | --- | --- | --- |
| 2 |  | FOPLP 8X9 Design | 6d | 2025-06-13 | 2025-06-18 |  | 100% |
| 3 |  | 2-FM+2M RDL wafer | 9d | 2025-07-18 | 2025-07-26 |  | 100% |
| 4 |  | 1st Eng sample | 45d | 2025-08-04 | 2025-09-17 |  | 100% |
| 5 | 4 | **RE 摸底** | 61d | 2025-09-18 | 2025-11-17 |  | 36% |
| 6 |  | Pre-con/MSL | 22d | 2025-09-18 | 2025-10-09 | 4 | 100% |
| 7 |  | 1st TC200 | 10d | 2025-10-10 | 2025-10-19 | 6 |  |
| 8 |  | 1st TC500 | 12d | 2025-10-20 | 2025-10-31 | 7 |  |
| 9 |  | 1st TC1000 | 17d | 2025-11-01 | 2025-11-17 | 8 |  |
| 10 |  | 3-FM+2M RDL wafer | 32d | 2025-10-10 | 2025-11-10 |  |  |
| 11 |  | FOPLP 8X8 design | 5d | 2025-10-13 | 2025-10-17 |  |  |
| 12 |  | FOPLP 8X8 Eng Sample | 41d | 2025-11-11 | 2025-12-21 | 10 |  |

## Version 2 (saved 2025-10-20)

Last finish stays 2025-12-21.

Changed:

| ID | Task | Start | Finish | Duration | Complete |
| --- | --- | --- | --- | --- | --- |
| 5 | **RE 摸底** |  | 2025-11-17 → 2025-11-26 (+9d) | 61d → 70d | 36% → 47% |
| 6 | Pre-con/MSL |  | 2025-10-09 → 2025-10-20 (+11d) | 22d → 33d |  |
| 7 | 1st TC200 | 2025-10-10 → 2025-10-21 (+11d) | 2025-10-19 → 2025-10-29 (+10d) | 10d → 9d |  |
| 8 | 1st TC500 | 2025-10-20 → 2025-10-30 (+10d) | 2025-10-31 → 2025-11-10 (+10d) |  |  |
| 9 | 1st TC1000 | 2025-11-01 → 2025-11-11 (+10d) | 2025-11-17 → 2025-11-26 (+9d) | 17d → 16d |  |

## Version 3 (saved 2025-10-27)

Last finish 2025-12-21 → 2026-04-17 (+117d). Complete tasks 4 → 5.

Added:

| ID | Task | Duration | Start | Finish | Predecessors |
| --- | --- | --- | --- | --- | --- |
| 10 | Pre-qual wafer W/S | 32d | 2025-10-10 | 2025-11-10 |  |
| 12 | FOPLP 8X8 1st ES | 36d | 2025-10-28 | 2025-12-02 | 11 |
| 13 | **Pre-qual 1 lot** | 30d | 2025-12-18 | 2026-01-16 |  |
| 14 | TC200 | 7d | 2025-12-18 | 2025-12-24 |  |
| 15 | TC500 | 30d | 2025-12-18 | 2026-01-16 |  |
| 16 | Formal Qual W/S | 32d | 2025-10-27 | 2025-11-27 |  |
| 17 | **Assembly (3-FM+2M BSL)** | 95d | 2025-11-28 | 2026-03-02 | 16 |
| 18 | RDL+CP | 30d | 2025-11-28 | 2025-12-27 |  |
| 19 | FOPLP 8X8 封装 | 45d | 2026-01-17 | 2026-03-02 | 15 |
| 20 | **Formal qual 3 Lot** | 44d | 2026-03-03 | 2026-04-15 |  |
| 21 | TC200 | 7d | 2026-03-03 | 2026-03-09 | 19 |
| 22 | TC500 | 30d | 2026-03-05 | 2026-04-03 |  |
| 23 | TC1000 | 42d | 2026-03-05 | 2026-04-15 |  |
| 24 | FOPLP 8X8 Release | 2d | 2026-04-16 | 2026-04-17 | 23 |

Removed: 10 3-FM+2M RDL wafer; 12 FOPLP 8X8 Eng Sample

Changed:

| ID | Task | Start | Finish | Duration | Complete | Predecessors |
| --- | --- | --- | --- | --- | --- | --- |
| 5 | **RE 摸底** |  |  |  | 47% → 33% |  |
| 7 | 1st TC200 | 2025-10-21 → 2025-10-20 (-1d) | 2025-10-29 → 2025-10-28 (-1d) |  |  | 6 → none |
| 8 | 1st TC500 | 2025-10-30 → 2025-10-21 (-9d) |  | 12d → 21d |  | 7 → none |
| 9 | 1st TC1000 | 2025-11-11 → 2025-10-21 (-21d) |  | 16d → 37d |  | 8 → none |
| 11 | FOPLP 8X8 design |  | 2025-10-17 → 2025-10-27 (+10d) | 5d → 15d | 0% → 100% |  |
