# G3.0 伏羲

How a schedule from a web Gantt chart changed from version to version. A marks actual dates.

## Version 1 (saved 2026-01-27)

| ID | WBS | Task | Duration | Start | Finish | Predecessors | Complete |
| --- | --- | --- | --- | --- | --- | --- | --- |
| 2 |  | Kick-off meeting | 1d | 2025-03-17 | 2025-03-17 |  | 100% |
| 3 | 2 | **1st 2FP lot - B91582** | 217d | 2025-04-05 | 2025-11-07 |  | 100% |
| 4 |  | wafer process | 30d | 2025-04-05 | 2025-05-04 |  | 100% |
| 5 |  | Assembly | 35d | 2025-05-05 | 2025-06-08 | 4 | 100% |
| 6 |  | 短路耐量验证 | 13d | 2025-10-26 | 2025-11-07 |  | 100% |
| 7 | 3 | **短路耐量验证 Lot** | 112d | 2025-09-21 | 2026-01-10 |  | 100% |
| 8 |  | CIP lot Wafer Process | 27d | 2025-09-21 | 2025-10-17 |  | 100% |
| 9 |  | F/O | 3d | 2025-10-18 | 2025-10-20 | 8 | 100% |
| 10 | 3.3 | **RDL** | 33d | 2025-10-21 | 2025-11-22 | 9 | 100% |
| 11 |  | RDL下线 | 11d | 2025-10-21 | 2025-10-31 |  | 100% |
| 12 |  | 厂外CP测试 | 6d | 2025-11-01 | 2025-11-06 | 11 | 100% |
| 13 |  | RDL完成 | 16d | 2025-11-07 | 2025-11-22 | 12 | 100% |
| 14 |  | TOLL封装(含die trace) | 30d | 2025-11-23 | 2025-12-22 | 10 | 100% |
| 15 |  | 短路耐量验证 | 19d | 2025-12-23 | 2026-01-10 | 14 | 100% |
| 16 | 4 | **3FP + 2M + M.S. (Pre-Qual. lot)** | 236d | 2025-10-08 | 2026-05-31 |  | 35% |
| 17 |  | Wafer Process | 49d | 2025-10-08 | 2025-11-25 |  | 100% |
| 18 |  | RDL & CP | 36d | 2025-11-26 | 2025-12-31 |  | 100% |
| 19 | 4.3 | **短路耐量确认** | 65d | 2025-12-26 | 2026-02-28 |  |  |
| 20 |  | TOLL Assemby | 52d | 2025-12-26 | 2026-02-15 |  |  |
| 21 |  | 短路耐量测试 | 13d | 2026-02-16 | 2026-02-28 | 20 |  |
| 22 | 4.4 | **可靠性(TC/..)验证** | 93d | 2026-02-28 | 2026-05-31 |  |  |
| 23 |  | TOLL Assembly | 25d | 2026-02-28 | 2026-03-24 |  |  |
| 24 |  | FT | 7d | 2026-03-25 | 2026-03-31 | 23 |  |
| 25 |  | RE | 61d | 2026-04-01 | 2026-05-31 | 24 |  |
| 26 | 5 | **Formal Qual.** | 154d | 2026-06-01 | 2026-11-01 | 25 |  |
| 27 |  | Wafer | 25d | 2026-06-01 | 2026-06-25 |  |  |
| 28 |  | RDL+CP | 31d | 2026-06-26 | 2026-07-26 | 27 |  |
| 29 |  | TOLL封装+FT | 37d | 2026-07-27 | 2026-09-01 | 28 |  |
| 30 |  | RE | 61d | 2026-09-02 | 2026-11-01 | 29 |  |

## Version 2 (saved 2026-01-30)

Last finish 2026-11-01 → 2026-11-03 (+2d).

Added:

| ID | Task | Duration | Start | Finish |
| --- | --- | --- | --- | --- |
| 23 | RDL减薄 &CP | 36d | 2026-01-25 | 2026-03-01 |

Changed:

| ID | Task | Start | Finish | Duration | Complete | Predecessors |
| --- | --- | --- | --- | --- | --- | --- |
| 16 | **3FP + 2M + M.S. (Pre-Qual. lot)** |  | 2026-05-31 → 2026-06-02 (+2d) | 236d → 238d | 35% → 30% |  |
| 22 | **可靠性(TC/..)验证** | 2026-02-28 → 2026-01-25 (-34d) | 2026-05-31 → 2026-06-02 (+2d) | 93d → 129d |  |  |
| 24 | TOLL Assembly | 2026-02-28 → 2026-03-02 (+2d) | 2026-03-24 → 2026-03-26 (+2d) |  |  | none → 23 |
| 25 | FT | 2026-03-25 → 2026-03-27 (+2d) | 2026-03-31 → 2026-04-02 (+2d) |  |  |  |
| 26 | RE | 2026-04-01 → 2026-04-03 (+2d) | 2026-05-31 → 2026-06-02 (+2d) |  |  |  |
| 27 | **Formal Qual.** | 2026-06-01 → 2026-06-03 (+2d) | 2026-11-01 → 2026-11-03 (+2d) |  |  |  |
| 28 | Wafer | 2026-06-01 → 2026-06-03 (+2d) | 2026-06-25 → 2026-06-27 (+2d) |  |  |  |
| 29 | RDL+CP | 2026-06-26 → 2026-06-28 (+2d) | 2026-07-26 → 2026-07-28 (+2d) |  |  |  |
| 30 | TOLL封装+FT | 2026-07-27 → 2026-07-29 (+2d) | 2026-09-01 → 2026-09-03 (+2d) |  |  |  |
| 31 | RE | 2026-09-02 → 2026-09-04 (+2d) | 2026-11-01 → 2026-11-03 (+2d) |  |  |  |
