# VGaN

How a schedule from a web Gantt chart changed from version to version. A marks actual dates.

## Version 1 (saved 2025-10-13)

| ID | WBS | Task | Duration | Start | Finish | Predecessors | Complete |
| --- | --- | --- | --- | --- | --- | --- | --- |
| 2 | 1 | **Pre-qual lot** | 140d | 2025-07-23 | 2025-12-09 |  | 60% |
| 3 |  | DeviceB 3FP SPW mask T/O | 8d | 2025-07-23 | 2025-07-30 |  | 100% |
| 4 |  | Fab Process & F/O | 30d | 2025-07-31 | 2025-08-29 | 3 | 100% |
| 5 |  | Device lot 补投 | 31d | 2025-08-30 | 2025-09-29 | 4 | 100% |
| 6 |  | Assembly | 31d | 2025-09-30 | 2025-10-30 | 5 | 50% |
| 7 |  | Pre-qual datasheet & AE test&RE168 | 40d | 2025-10-31 | 2025-12-09 | 6 |  |
| 8 | 2 | **Formal Qual. Lot** | 176d | 2025-11-26 | 2026-05-20 |  |  |
| 9 | 2.1 | **1st Formal Qual.** | 157d | 2025-11-26 | 2026-05-01 |  |  |
| 10 |  | 1st formal qual W/S | 40d | 2025-11-26 | 2026-01-04 |  |  |
| 11 |  | 1st formal qual assembly | 47d | 2026-01-05 | 2026-02-20 | 10 |  |
| 12 |  | 1st formal qual RE1000 | 70d | 2026-02-21 | 2026-05-01 | 11 |  |
| 13 | 2.2 | **2nd Formal Qual.** | 157d | 2025-12-05 | 2026-05-10 |  |  |
| 14 |  | 2nd formal qual W/S | 42d | 2025-12-05 | 2026-01-15 |  |  |
| 15 |  | 2nd formal qual assembly | 45d | 2026-01-16 | 2026-03-01 | 14 |  |
| 16 |  | 2nd formal qual RE1000 | 70d | 2026-03-02 | 2026-05-10 | 15 |  |
| 17 | 2.3 | **3rd Formal Qual.** | 162d | 2025-12-10 | 2026-05-20 |  |  |
| 18 |  | 3rd formal qual W/S | 42d | 2025-12-10 | 2026-01-20 |  |  |
| 19 |  | 3rd formal qual assembly | 45d | 2026-01-21 | 2026-03-06 | 18 |  |
| 20 |  | 3rd formal qual RE1000 | 75d | 2026-03-07 | 2026-05-20 | 19 |  |
| 21 |  | 技术达成 | 2d | 2026-05-30 | 2026-05-31 |  |  |

## Version 2 (saved 2025-10-13)

Last finish stays 2026-05-31.

Changed:

| ID | Task | Complete |
| --- | --- | --- |
| 2 | **Pre-qual lot** | 60% → 59% |
| 6 | Assembly | 50% → 45% |

## Version 3 (saved 2025-11-03)

Last finish stays 2026-05-31. Complete tasks 3 → 4.

Changed:

| ID | Task | Complete |
| --- | --- | --- |
| 2 | **Pre-qual lot** | 59% → 71% |
| 6 | Assembly | 45% → 100% |
