# 东科 Vth -1V

How a schedule from a web Gantt chart changed from version to version. A marks actual dates.

## Version 1 (saved 2025-10-11)

| ID | Task | Duration | Start | Finish | Complete |
| --- | --- | --- | --- | --- | --- |
| 2 | kick-off | 1d | 2025-09-29 | 2025-09-29 | 100% |
| 3 | 项目立项会议 | 1d | 2025-10-13 | 2025-10-13 |  |

## Version 2 (saved 2025-10-11)

Last finish 2025-10-13 → 2026-12-30 (+443d).

Added:

| ID | Task | Duration | Start | Finish | Predecessors |
| --- | --- | --- | --- | --- | --- |
| 3 | **1st Learning Cycle** | 107d | 2025-10-15 | 2026-01-29 |  |
| 5 | W/S | 30d | 2025-10-15 | 2025-11-13 |  |
| 6 | F/O | 2d | 2025-11-14 | 2025-11-15 | 5 |
| 7 | Samples | 35d | 2025-11-16 | 2025-12-20 | 6 |
| 8 | RE 1000H | 40d | 2025-12-21 | 2026-01-29 | 7 |
| 9 | **2nd Learning Cycle** | 120d | 2026-01-30 | 2026-05-29 |  |
| 10 | Wafer & Assembly | 80d | 2026-01-30 | 2026-04-19 |  |
| 11 | RE 1000H | 40d | 2026-04-20 | 2026-05-29 | 10 |
| 12 | **3rd Learning Cycle** | 90d | 2026-05-31 | 2026-08-28 |  |
| 13 | Wafer & Assembly | 50d | 2026-05-31 | 2026-07-19 |  |
| 14 | RE 1000H | 40d | 2026-07-20 | 2026-08-28 | 13 |
| 15 | **Formal Qual.** | 121d | 2026-09-01 | 2026-12-30 |  |
| 16 | SPW W/S | 41d | 2026-09-01 | 2026-10-11 |  |
| 17 | F/O & Assemby out | 30d | 2026-10-12 | 2026-11-10 | 16 |
| 18 | RE 168H | 15d | 2026-11-11 | 2026-11-25 | 17 |
| 19 | RE 1000H | 50d | 2026-11-11 | 2026-12-30 | 17 |

Changed:

| ID | Task | Start | Finish |
| --- | --- | --- | --- |
| 4 | 项目立项会议 | 2025-10-13 → 2025-10-15 (+2d) | 2025-10-13 → 2025-10-15 (+2d) |

## Version 3 (saved 2025-10-14)

Last finish 2026-12-30 → 2026-12-29 (-1d).

Changed:

| ID | Task | Start | Finish |
| --- | --- | --- | --- |
| 15 | **Formal Qual.** | 2026-09-01 → 2026-08-31 (-1d) | 2026-12-30 → 2026-12-29 (-1d) |
| 16 | SPW W/S | 2026-09-01 → 2026-08-31 (-1d) | 2026-10-11 → 2026-10-10 (-1d) |
| 17 | F/O & Assemby out | 2026-10-12 → 2026-10-11 (-1d) | 2026-11-10 → 2026-11-09 (-1d) |
| 18 | RE 168H | 2026-11-11 → 2026-11-10 (-1d) | 2026-11-25 → 2026-11-24 (-1d) |
| 19 | RE 1000H | 2026-11-11 → 2026-11-10 (-1d) | 2026-12-30 → 2026-12-29 (-1d) |

## Version 4 (saved 2025-10-31)

Last finish stays 2026-12-29.

Added:

| ID | Task | Duration | Start | Finish | Predecessors |
| --- | --- | --- | --- | --- | --- |
| 5 | Tape out | 7d | 2025-11-04 | 2025-11-10 |  |
| 6 | CP Probe Card | 42d | 2025-11-04 | 2025-12-15 |  |
| 7 | Wafer Process(Skip CP) | 30d | 2025-11-11 | 2025-12-10 | 5 |
| 8 | WLRE | 11d | 2025-12-11 | 2025-12-21 | 7 |
| 10 | **RE** | 40d | 2026-01-06 | 2026-02-14 | 9 |
| 11 | RE 168H | 14d | 2026-01-06 | 2026-01-19 | 9 |

Removed: 5 W/S; 6 F/O

Changed:

| ID | Task | Start | Finish | Duration | Predecessors |
| --- | --- | --- | --- | --- | --- |
| 4 | **1st Learning Cycle** | 2025-10-15 → 2025-11-04 (+20d) | 2026-01-29 → 2026-02-14 (+16d) | 107d → 103d |  |
| 9 | Samples | 2025-11-16 → 2025-12-11 (+25d) | 2025-12-20 → 2026-01-05 (+16d) | 35d → 26d | F/O → 7 |
| 12 | RE 1000H | 2025-12-21 → 2026-01-06 (+16d) | 2026-01-29 → 2026-02-14 (+16d) |  |  |

## Version 5 (saved 2025-11-07)

Last finish stays 2026-12-29.

Added:

| ID | Task | Duration | Start | Finish | Predecessors |
| --- | --- | --- | --- | --- | --- |
| 9 | Assembly | 26d | 2025-12-11 | 2026-01-05 | 7 |

Removed: 9 Samples

Changed:

| ID | Task | Complete | Predecessors |
| --- | --- | --- | --- |
| 4 | **1st Learning Cycle** | 0% → 6% |  |
| 5 | Tape out | 0% → 62% |  |
| 6 | CP Probe Card | 0% → 16% |  |
| 10 | **RE** |  | Samples → 9 |
| 11 | RE 168H |  | Samples → 9 |
| 12 | RE 1000H |  | Samples → 9 |

## Version 6 (saved 2025-11-17)

Last finish stays 2026-12-29. Complete tasks 1 → 2.

Changed:

| ID | Task | Start | Finish | Duration | Complete | Predecessors |
| --- | --- | --- | --- | --- | --- | --- |
| 4 | **1st Learning Cycle** |  | 2026-02-14 → 2026-02-24 (+10d) | 103d → 113d | 6% → 8% |  |
| 5 | Tape out |  |  |  | 62% → 100% |  |
| 7 | Wafer Process(Skip CP) | 2025-11-11 → 2025-11-21 (+10d) | 2025-12-10 → 2025-12-20 (+10d) |  |  | 5 → none |
| 8 | WLRE | 2025-12-11 → 2025-12-21 (+10d) | 2025-12-21 → 2025-12-31 (+10d) |  |  |  |
| 9 | Assembly | 2025-12-11 → 2025-12-21 (+10d) | 2026-01-05 → 2026-01-15 (+10d) |  |  |  |
| 10 | **RE** | 2026-01-06 → 2026-01-16 (+10d) | 2026-02-14 → 2026-02-24 (+10d) |  |  | 9 → none |
| 11 | RE 168H | 2026-01-06 → 2026-01-16 (+10d) | 2026-01-19 → 2026-01-29 (+10d) |  |  |  |
| 12 | RE 1000H | 2026-01-06 → 2026-01-16 (+10d) | 2026-02-14 → 2026-02-24 (+10d) |  |  |  |

## Version 7 (saved 2025-11-28)

Last finish stays 2026-12-29. Complete tasks 2 → 3.

Changed:

| ID | Task | Start | Finish | Complete |
| --- | --- | --- | --- | --- |
| 3 | 项目立项会议 | 2025-10-15 → 2025-11-20 (+36d) | 2025-10-15 → 2025-11-20 (+36d) | 0% → 100% |

## Version 8 (saved 2025-12-01)

Last finish 2026-12-29 → 2026-12-31 (+2d).

Changed:

| ID | Task | Start | Finish | Duration | Complete |
| --- | --- | --- | --- | --- | --- |
| 4 | **1st Learning Cycle** | 2025-11-04 → 2025-11-21 (+17d) | 2026-02-24 → 2026-02-28 (+4d) | 113d → 100d | 8% → 5% |
| 5 | Tape out | 2025-11-04 → 2025-11-21 (+17d) | 2025-11-10 → 2025-11-23 (+13d) | 7d → 3d |  |
| 6 | CP Probe Card | 2025-11-04 → 2025-11-21 (+17d) | 2025-12-15 → 2025-12-30 (+15d) | 42d → 40d |  |
| 7 | Wafer Process(Skip CP) | 2025-11-21 → 2025-11-25 (+4d) | 2025-12-20 → 2025-12-24 (+4d) |  |  |
| 8 | WLRE | 2025-12-21 → 2025-12-25 (+4d) | 2025-12-31 → 2026-01-18 (+18d) | 11d → 25d |  |
| 9 | Assembly | 2025-12-21 → 2025-12-25 (+4d) | 2026-01-15 → 2026-01-19 (+4d) |  |  |
| 10 | **RE** | 2026-01-16 → 2026-01-20 (+4d) | 2026-02-24 → 2026-02-28 (+4d) |  |  |
| 11 | RE 168H | 2026-01-16 → 2026-01-20 (+4d) | 2026-01-29 → 2026-01-30 (+1d) | 14d → 11d |  |
| 12 | RE 1000H | 2026-01-16 → 2026-01-20 (+4d) | 2026-02-24 → 2026-02-28 (+4d) |  |  |
| 16 | **3rd Learning Cycle** |  | 2026-08-28 → 2026-08-31 (+3d) | 90d → 93d |  |
| 18 | RE 1000H |  | 2026-08-28 → 2026-08-31 (+3d) | 40d → 43d |  |
| 19 | **Formal Qual.** |  | 2026-12-29 → 2026-12-31 (+2d) | 121d → 123d |  |
| 23 | RE 1000H |  | 2026-12-29 → 2026-12-31 (+2d) | 50d → 52d |  |

## Version 9 (saved 2026-01-16)

Last finish stays 2026-12-31.

Added:

| ID | Task | Duration | Start | Finish |
| --- | --- | --- | --- | --- |
| 7 | Wafer Process & CP | 30d | 2025-11-24 | 2025-12-23 |

Removed: 7 Wafer Process(Skip CP)

Changed:

| ID | Task | Start | Finish | Duration | Predecessors |
| --- | --- | --- | --- | --- | --- |
| 4 | **1st Learning Cycle** |  | 2026-02-28 → 2026-02-27 (-1d) | 100d → 99d |  |
| 8 | WLRE | 2025-12-25 → 2025-12-24 (-1d) | 2026-01-18 → 2026-01-17 (-1d) |  | Wafer Process(Skip CP) → 7 |
| 9 | Assembly | 2025-12-25 → 2025-12-24 (-1d) | 2026-01-19 → 2026-01-18 (-1d) |  | Wafer Process(Skip CP) → 7 |
| 10 | **RE** | 2026-01-20 → 2026-01-19 (-1d) | 2026-02-28 → 2026-02-27 (-1d) |  |  |
| 11 | RE 168H | 2026-01-20 → 2026-01-19 (-1d) | 2026-01-30 → 2026-01-29 (-1d) |  |  |
| 12 | RE 1000H | 2026-01-20 → 2026-01-19 (-1d) | 2026-02-28 → 2026-02-27 (-1d) |  |  |

## Version 10 (saved 2026-01-20)

Last finish stays 2026-12-31.

Changed:

| ID | Task | Start | Finish | Duration |
| --- | --- | --- | --- | --- |
| 4 | **1st Learning Cycle** |  | 2026-02-27 → 2026-03-17 (+18d) | 99d → 117d |
| 7 | Wafer Process & CP |  | 2025-12-23 → 2026-01-10 (+18d) | 30d → 48d |
| 8 | WLRE | 2025-12-24 → 2026-01-11 (+18d) | 2026-01-17 → 2026-02-04 (+18d) |  |
| 9 | Assembly | 2025-12-24 → 2026-01-11 (+18d) | 2026-01-18 → 2026-02-05 (+18d) |  |
| 10 | **RE** | 2026-01-19 → 2026-02-06 (+18d) | 2026-02-27 → 2026-03-17 (+18d) |  |
| 11 | RE 168H | 2026-01-19 → 2026-02-06 (+18d) | 2026-01-29 → 2026-02-16 (+18d) |  |
| 12 | RE 1000H | 2026-01-19 → 2026-02-06 (+18d) | 2026-02-27 → 2026-03-17 (+18d) |  |
