# 星火G3.5 1A

How a schedule from a web Gantt chart changed from version to version. A marks actual dates.

## Version 1 (saved 2025-10-11)

| ID | Task | Duration | Start | Finish |
| --- | --- | --- | --- | --- |
| 2 | Layout ready | 1d | 2025-08-08 | 2025-08-08 |
| 3 | Mask in | 4d | 2025-08-08 | 2025-08-11 |

## Version 2 (saved 2025-10-11)

Last finish 2025-08-11 → 2025-12-29 (+140d). Complete tasks 0 → 3.

Added:

| ID | Task | Duration | Start | Finish | Predecessors |
| --- | --- | --- | --- | --- | --- |
| 3 | Mask in & W/S | 28d | 2025-08-12 | 2025-09-08 | 2 |
| 4 | 1st device lot F/O & CP | 20d | 2025-09-09 | 2025-09-28 | 3 |
| 5 | Assembly | 30d | 2025-09-29 | 2025-10-28 | 4 |
| 6 | Package ready | 2d | 2025-10-29 | 2025-10-30 | 5 |
| 7 | **RE 验证** | 60d | 2025-10-31 | 2025-12-29 |  |
| 8 | RE 168H & Samples ready | 15d | 2025-10-31 | 2025-11-14 | 6 |
| 9 | RE 1000H | 60d | 2025-10-31 | 2025-12-29 | 6 |

Removed: 3 Mask in

Changed:

| ID | Task | Finish | Duration | Complete |
| --- | --- | --- | --- | --- |
| 2 | Layout ready | 2025-08-08 → 2025-08-11 (+3d) | 1d → 4d | 0% → 100% |

## Version 3 (saved 2025-10-17)

Last finish 2025-12-29 → 2025-12-24 (-5d). Complete tasks 3 → 4.

Added:

| ID | Task | Duration | Start | Finish | Predecessors |
| --- | --- | --- | --- | --- | --- |
| 5 | **盲封 验证动态性能&RE** | 87d | 2025-09-29 | 2025-12-24 |  |
| 11 | CRE 动态验证 | 6d | 2025-10-26 | 2025-10-31 | 7 |
| 12 | **验证Vth & CP/system Idsat** | 44d | 2025-10-17 | 2025-11-29 |  |
| 13 | wafer寄出 | 1d | 2025-10-17 | 2025-10-17 |  |
| 14 | Assemby | 29d | 2025-10-18 | 2025-11-15 | 13 |
| 15 | 蓝膜样品准备 | 30d | 2025-10-31 | 2025-11-29 |  |

Changed:

| ID | Task | Start | Finish | Duration | Complete | Predecessors |
| --- | --- | --- | --- | --- | --- | --- |
| 6 | Assembly |  | 2025-10-28 → 2025-10-23 (-5d) | 30d → 25d | 45% → 72% |  |
| 7 | Package ready | 2025-10-29 → 2025-10-24 (-5d) | 2025-10-30 → 2025-10-25 (-5d) |  |  |  |
| 8 | **RE 验证** | 2025-10-31 → 2025-10-26 (-5d) | 2025-12-29 → 2025-12-24 (-5d) |  |  | none → 7 |
| 9 | RE 168H & Samples ready | 2025-10-31 → 2025-10-26 (-5d) | 2025-11-14 → 2025-11-09 (-5d) |  |  | 7 → none |
| 10 | RE 1000H | 2025-10-31 → 2025-10-26 (-5d) | 2025-12-29 → 2025-12-24 (-5d) |  |  | 7 → none |

## Version 4 (saved 2025-10-23)

Last finish stays 2025-12-24.

Changed:

| ID | Task | Complete |
| --- | --- | --- |
| 12 | **验证Vth & CP/system Idsat** | 0% → 2% |

## Version 5 (saved 2025-10-24)

Last finish stays 2025-12-24. Complete tasks 4 → 6.

Added:

| ID | Task | Duration | Start | Finish | Predecessors |
| --- | --- | --- | --- | --- | --- |
| 12 | Bench test | 6d | 2025-10-26 | 2025-10-31 | 7 |

Changed:

| ID | Task | Start | Finish | Duration | Complete | Predecessors |
| --- | --- | --- | --- | --- | --- | --- |
| 5 | **盲封 验证动态性能&RE** |  |  |  | 17% → 24% |  |
| 6 | Assembly |  |  |  | 72% → 100% |  |
| 7 | Package ready |  |  |  | 0% → 100% |  |
| 13 | **验证Vth & CP/system Idsat** |  | 2025-11-29 → 2025-12-09 (+10d) | 44d → 54d |  |  |
| 16 | 蓝膜样品准备 | 2025-10-31 → 2025-11-10 (+10d) | 2025-11-29 → 2025-12-09 (+10d) |  |  | none → 9 |

## Version 6 (saved 2025-10-31)

Last finish stays 2025-12-24. Complete tasks 6 → 7.

Changed:

| ID | Task | Complete |
| --- | --- | --- |
| 5 | **盲封 验证动态性能&RE** | 24% → 29% |
| 11 | CRE 动态验证 | 0% → 100% |

## Version 7 (saved 2025-11-07)

Last finish 2025-12-24 → 2026-01-09 (+16d).

Added:

| ID | Task | Duration | Start | Finish | Predecessors |
| --- | --- | --- | --- | --- | --- |
| 2 | **1st device lot** | 154d | 2025-08-08 | 2026-01-08 |  |
| 6 | **盲封 验证动态性能&RE (动态已fail)** | 102d | 2025-09-29 | 2026-01-08 |  |
| 18 | **2nd 改版 device lot** | 59d | 2025-11-12 | 2026-01-09 |  |
| 19 | Wafer Process | 24d | 2025-11-12 | 2025-12-05 |  |
| 20 | Assembly | 25d | 2025-12-06 | 2025-12-30 | 19 |
| 21 | 动态验证 | 10d | 2025-12-31 | 2026-01-09 | 20 |

Removed: 5 盲封 验证动态性能&RE

Changed:

| ID | Task | Start | Finish | Duration | Complete | Predecessors |
| --- | --- | --- | --- | --- | --- | --- |
| 10 | **RE 验证** | 2025-10-26 → 2025-11-10 (+15d) | 2025-12-24 → 2026-01-08 (+15d) |  |  | 8 → none |
| 11 | RE 168H & Samples ready | 2025-10-26 → 2025-11-10 (+15d) | 2025-11-09 → 2025-11-24 (+15d) |  |  |  |
| 12 | RE 1000H | 2025-10-26 → 2025-11-10 (+15d) | 2025-12-24 → 2026-01-08 (+15d) |  |  |  |
| 13 | Bench test | 2025-10-26 → 2025-11-10 (+15d) | 2025-10-31 → 2025-11-14 (+14d) | 6d → 5d |  | 8 → none |
| 14 | **验证Vth & CP/system Idsat** |  | 2025-12-09 → 2025-12-24 (+15d) | 54d → 69d | 2% → 37% |  |
| 16 | Assemby |  |  |  | 0% → 74% |  |
| 17 | 蓝膜样品准备 | 2025-11-10 → 2025-11-25 (+15d) | 2025-12-09 → 2025-12-24 (+15d) |  |  |  |

## Version 8 (saved 2025-11-11)

Last finish 2026-01-09 → 2026-03-24 (+74d).

Added:

| ID | Task | Duration | Start | Finish | Predecessors |
| --- | --- | --- | --- | --- | --- |
| 18 | **2nd 改版 device lot(AA mask / pGaN +OHO)** | 144d | 2025-11-01 | 2026-03-24 |  |
| 19 | **Fab Process** | 42d | 2025-11-01 | 2025-12-12 |  |
| 20 | Mask ready | 14d | 2025-11-01 | 2025-11-14 |  |
| 22 | WLRE | 10d | 2025-12-13 | 2025-12-22 | 19 |
| 24 | **RE验证** | 80d | 2026-01-04 | 2026-03-24 | 23 |
| 25 | RE 168H | 16d | 2026-01-04 | 2026-01-19 |  |
| 26 | RE 500H | 35d | 2026-01-04 | 2026-02-07 |  |
| 27 | RE 1008H | 80d | 2026-01-04 | 2026-03-24 |  |

Removed: 18 2nd 改版 device lot; 21 动态验证

Changed:

| ID | Task | Start | Finish | Duration | Predecessors |
| --- | --- | --- | --- | --- | --- |
| 21 | Wafer Process | 2025-11-12 → 2025-11-15 (+3d) | 2025-12-05 → 2025-12-12 (+7d) | 24d → 28d | none → 20 |
| 23 | Assembly | 2025-12-06 → 2025-12-13 (+7d) | 2025-12-30 → 2026-01-03 (+4d) | 25d → 22d | 21 → 19 |

## Version 9 (saved 2025-11-13)

Last finish 2026-03-24 → 2026-05-09 (+46d).

Added:

| ID | Task | Duration | Start | Finish | Predecessors |
| --- | --- | --- | --- | --- | --- |
| 12 | RE 1008H | 60d | 2025-11-10 | 2026-01-08 |  |
| 24 | **Pre-qual (1lot) 可靠性验证** | 80d | 2026-01-04 | 2026-03-24 | 23 |
| 28 | **Formal qual (3lot)** | 110d | 2026-01-20 | 2026-05-09 |  |
| 29 | Wafer process | 25d | 2026-01-20 | 2026-02-13 | 25 |
| 30 | Assembly | 30d | 2026-02-24 | 2026-03-25 |  |
| 31 | RE 168H | 14d | 2026-03-26 | 2026-04-08 | 30 |
| 32 | RE 504H | 30d | 2026-03-26 | 2026-04-24 |  |
| 33 | RE 1008H | 45d | 2026-03-26 | 2026-05-09 |  |

Removed: 12 RE 1000H; 24 RE验证

## Version 10 (saved 2025-11-14)

Last finish 2026-05-09 → 2026-03-24 (-46d).

Added:

| ID | Task | Duration | Start | Finish | Predecessors |
| --- | --- | --- | --- | --- | --- |
| 12 | RE 1000H | 60d | 2025-11-10 | 2026-01-08 |  |
| 24 | **RE验证** | 80d | 2026-01-04 | 2026-03-24 | 23 |

Removed: 12 RE 1008H; 24 Pre-qual (1lot) 可靠性验证; 28 Formal qual (3lot); 29 Wafer process; 30 Assembly; 31 RE 168H; 32 RE 504H; 33 RE 1008H

## Version 11 (saved 2025-11-20)

Last finish stays 2026-03-24. Complete tasks 7 → 8.

Changed:

| ID | Task | Complete |
| --- | --- | --- |
| 2 | **1st device lot** | 48% → 50% |
| 6 | **盲封 验证动态性能&RE (动态已fail)** | 29% → 34% |
| 13 | Bench test | 0% → 100% |

## Version 12 (saved 2025-11-24)

Last finish stays 2026-03-24. Complete tasks 8 → 10.

Added:

| ID | Task | Duration | Start | Finish |
| --- | --- | --- | --- | --- |
| 11 | RE 168H | 15d | 2025-11-10 | 2025-11-24 |
| 18 | 动态电流 | 8d | 2025-11-23 | 2025-11-30 |
| 20 | **Fab Process(AA mask下线, pGaN+OHO待T/O)** | 42d | 2025-11-01 | 2025-12-12 |

Removed: 11 RE 168H & Samples ready; 19 Fab Process

Changed:

| ID | Task | Complete | Predecessors |
| --- | --- | --- | --- |
| 2 | **1st device lot** | 50% → 58% |  |
| 6 | **盲封 验证动态性能&RE (动态已fail)** | 34% → 47% |  |
| 10 | **RE 验证** | 0% → 20% |  |
| 14 | 蓝膜样品准备 |  | RE 168H & Samples ready → 11 |
| 15 | **验证Vth & CP/system Idsat** | 37% → 79% |  |
| 17 | Assemby | 74% → 100% |  |
| 23 | WLRE |  | Fab Process → 20 |
| 24 | Assembly |  | Fab Process → 20 |

## Version 13 (saved 2025-12-15)

Last finish stays 2026-03-24.

Added:

| ID | Task | Duration | Start | Finish |
| --- | --- | --- | --- | --- |
| 20 | **Fab Process** | 42d | 2025-11-01 | 2025-12-12 |

Removed: 20 Fab Process(AA mask下线, pGaN+OHO待T/O)

Changed:

| ID | Task | Predecessors |
| --- | --- | --- |
| 23 | WLRE | Fab Process(AA mask下线, pGaN+OHO待T/O) → 20 |
| 24 | Assembly | Fab Process(AA mask下线, pGaN+OHO待T/O) → 20 |

## Version 14 (saved 2025-12-22)

Last finish 2026-03-24 → 2026-05-02 (+39d). Complete tasks 10 → 15.

Added:

| ID | Task | Duration | Start | Finish | Predecessors |
| --- | --- | --- | --- | --- | --- |
| 19 | **3合1(GO/GM/FP1 remove)** | 130d | 2025-11-15 | 2026-03-24 |  |
| 22 | PKG+FT | 27d | 2025-12-02 | 2025-12-28 | 20 |
| 23 | PE Bench | 12d | 2025-12-29 | 2026-01-09 | 22 |
| 24 | DRon | 8d | 2025-12-29 | 2026-01-05 | 22 |
| 28 | **4合1(GO/GM/GP1/AA remove, pGaN/OHO)** | 131d | 2025-12-01 | 2026-04-10 |  |
| 29 | Wafer process | 22d | 2025-12-01 | 2025-12-22 |  |
| 30 | WLRE | 4d | 2025-12-23 | 2025-12-26 | 29 |
| 31 | PKG+FT | 25d | 2025-12-27 | 2026-01-20 | 30 |
| 32 | D-RON | 10d | 2026-01-21 | 2026-01-30 | 31 |
| 33 | PE Bench | 7d | 2026-01-21 | 2026-01-27 | 31 |
| 34 | RE168 | 14d | 2026-01-21 | 2026-02-03 | 31 |
| 35 | RE1000 | 80d | 2026-01-21 | 2026-04-10 | 31 |
| 36 | **2nd/3rd Qual. lot** | 127d | 2025-12-27 | 2026-05-02 | 30 |
| 37 | Wafer process | 22d | 2025-12-27 | 2026-01-17 | 30 |
| 38 | PKG-FT | 25d | 2026-01-18 | 2026-02-11 | 37 |
| 39 | RE168 | 14d | 2026-02-12 | 2026-02-25 | 38 |
| 40 | RE1000 | 80d | 2026-02-12 | 2026-05-02 | 38 |
| 41 | PE bench test | 7d | 2026-02-12 | 2026-02-18 | 38 |
| 42 | D-RON | 10d | 2026-02-12 | 2026-02-21 | 38 |
| 43 | AE | 14d | 2026-02-12 | 2026-02-25 | 38 |

Removed: 19 2nd 改版 device lot(AA mask / pGaN +OHO); 20 Fab Process; 21 Mask ready; 24 Assembly; 25 RE验证

Changed:

| ID | Task | Start | Finish | Duration | Complete | Predecessors |
| --- | --- | --- | --- | --- | --- | --- |
| 2 | **1st device lot** |  |  |  | 58% → 87% |  |
| 6 | **盲封 验证动态性能&RE (动态已fail)** |  |  |  | 47% → 100% |  |
| 10 | **RE 验证** |  |  |  | 20% → 100% |  |
| 12 | RE 1000H |  |  |  | 0% → 100% |  |
| 15 | **验证Vth & CP/system Idsat** |  |  |  | 79% → 100% |  |
| 18 | 动态电流 |  |  |  | 0% → 100% |  |
| 20 | Wafer Process |  | 2025-12-12 → 2025-12-01 (-11d) | 28d → 17d | 0% → 100% | Mask ready → none |
| 21 | WLRE | 2025-12-13 → 2025-12-02 (-11d) | 2025-12-22 → 2025-12-11 (-11d) |  | 0% → 100% | Fab Process → 20 |
| 25 | RE 168H | 2026-01-04 → 2025-12-29 (-6d) | 2026-01-19 → 2026-01-13 (-6d) |  |  | none → 22 |

## Version 15 (saved 2026-01-20)

Last finish 2026-05-02 → 2026-03-24 (-39d). Complete tasks 15 → 16.

Added:

| ID | Task | Duration | Start | Finish | Predecessors |
| --- | --- | --- | --- | --- | --- |
| 18 | **2nd 改版 device lot(GO/GM/FP1 三合一)** | 144d | 2025-11-01 | 2026-03-24 |  |
| 19 | **Fab Process** | 42d | 2025-11-01 | 2025-12-12 |  |
| 20 | Mask ready | 14d | 2025-11-01 | 2025-11-14 |  |
| 23 | Assembly | 22d | 2025-12-13 | 2026-01-03 | 19 |
| 24 | 动态性能验证 | 20d | 2026-01-04 | 2026-01-23 | 23 |
| 25 | **RE验证** | 80d | 2026-01-04 | 2026-03-24 | 23 |

Removed: 14 蓝膜样品准备; 19 3合1(GO/GM/FP1 remove); 22 PKG+FT; 23 PE Bench; 24 DRon; 28 4合1(GO/GM/GP1/AA remove, pGaN/OHO); 29 Wafer process; 30 WLRE; 31 PKG+FT; 32 D-RON; 33 PE Bench; 34 RE168; 35 RE1000; 36 2nd/3rd Qual. lot; 37 Wafer process; 38 PKG-FT; 39 RE168; 40 RE1000; 41 PE bench test; 42 D-RON; 43 AE

Changed:

| ID | Task | Start | Finish | Duration | Complete | Predecessors |
| --- | --- | --- | --- | --- | --- | --- |
| 2 | **1st device lot** |  |  |  | 87% → 100% |  |
| 14 | **验证Vth & CP/system Idsat** |  | 2025-12-24 → 2025-11-30 (-24d) | 69d → 45d |  |  |
| 21 | Wafer Process |  | 2025-12-01 → 2025-12-12 (+11d) | 17d → 28d |  | none → 20 |
| 22 | WLRE | 2025-12-02 → 2025-12-13 (+11d) | 2025-12-11 → 2025-12-22 (+11d) |  |  | 21 → 19 |
| 26 | RE 168H | 2025-12-29 → 2026-01-04 (+6d) | 2026-01-13 → 2026-01-19 (+6d) |  |  | PKG+FT → none |

## Version 16 (saved 2026-01-27)

Last finish 2026-03-24 → 2026-05-02 (+39d). Complete tasks 16 → 14.

Added:

| ID | Task | Duration | Start | Finish | Predecessors |
| --- | --- | --- | --- | --- | --- |
| 14 | 蓝膜样品准备 | 30d | 2025-11-25 | 2025-12-24 | 11 |
| 19 | **3合1(GO/GM/FP1 remove)** | 130d | 2025-11-15 | 2026-03-24 |  |
| 22 | PKG+FT | 27d | 2025-12-02 | 2025-12-28 | 20 |
| 23 | PE Bench | 12d | 2025-12-29 | 2026-01-09 | 22 |
| 24 | DRon | 8d | 2025-12-29 | 2026-01-05 | 22 |
| 26 | **2nd/3rd Qual. lot** | 127d | 2025-12-27 | 2026-05-02 |  |
| 27 | Wafer process | 22d | 2025-12-27 | 2026-01-17 |  |
| 28 | PKG-FT | 25d | 2026-01-18 | 2026-02-11 | 27 |
| 29 | RE168 | 14d | 2026-02-12 | 2026-02-25 | 28 |
| 30 | RE1000 | 80d | 2026-02-12 | 2026-05-02 | 28 |
| 31 | PE bench test | 7d | 2026-02-12 | 2026-02-18 | 28 |
| 32 | D-RON | 10d | 2026-02-12 | 2026-02-21 | 28 |
| 33 | AE | 14d | 2026-02-12 | 2026-02-25 | 28 |

Removed: 18 2nd 改版 device lot(GO/GM/FP1 三合一); 19 Fab Process; 20 Mask ready; 23 Assembly; 24 动态性能验证; 25 RE验证; 26 RE 168H; 27 RE 500H

Changed:

| ID | Task | Start | Finish | Duration | Complete | Predecessors |
| --- | --- | --- | --- | --- | --- | --- |
| 2 | **1st device lot** |  |  |  | 100% → 87% |  |
| 15 | **验证Vth & CP/system Idsat** |  | 2025-11-30 → 2025-12-24 (+24d) | 45d → 69d |  |  |
| 20 | Wafer Process |  | 2025-12-12 → 2025-12-01 (-11d) | 28d → 17d |  | Mask ready → none |
| 21 | WLRE | 2025-12-13 → 2025-12-02 (-11d) | 2025-12-22 → 2025-12-11 (-11d) |  |  | Fab Process → 20 |

## Version 17 (saved 2026-01-30)

Last finish 2026-05-02 → 2026-03-24 (-39d). Complete tasks 14 → 17.

Added:

| ID | Task | Duration | Start | Finish | Predecessors |
| --- | --- | --- | --- | --- | --- |
| 2 | **1st device lot (动态fail)** | 154d | 2025-08-08 | 2026-01-08 |  |
| 18 | **2nd 改版 device lot(GO/GM/FP1 三合一)** | 144d | 2025-11-01 | 2026-03-24 |  |
| 19 | **Fab Process** | 42d | 2025-11-01 | 2025-12-12 |  |
| 20 | Mask ready | 14d | 2025-11-01 | 2025-11-14 |  |
| 23 | Assembly | 22d | 2025-12-13 | 2026-01-03 | 19 |
| 24 | 客户送样 | 1d | 2026-01-27 | 2026-01-27 |  |
| 25 | 动态性能验证 | 53d | 2026-01-04 | 2026-02-25 | 23 |
| 26 | **RE验证（未开始，未提供最新计划）** | 80d | 2026-01-04 | 2026-03-24 | 23 |
| 27 | RE 168H | 16d | 2026-01-04 | 2026-01-19 |  |
| 28 | RE 500H | 35d | 2026-01-04 | 2026-02-07 |  |

Removed: 2 1st device lot; 14 蓝膜样品准备; 19 3合1(GO/GM/FP1 remove); 22 PKG+FT; 23 PE Bench; 24 DRon; 26 2nd/3rd Qual. lot; 27 Wafer process; 28 PKG-FT; 29 RE168; 30 RE1000; 31 PE bench test; 32 D-RON; 33 AE

Changed:

| ID | Task | Start | Finish | Duration | Predecessors |
| --- | --- | --- | --- | --- | --- |
| 14 | **验证Vth & CP/system Idsat** |  | 2025-12-24 → 2025-11-30 (-24d) | 69d → 45d |  |
| 21 | Wafer Process |  | 2025-12-01 → 2025-12-12 (+11d) | 17d → 28d | none → 20 |
| 22 | WLRE | 2025-12-02 → 2025-12-13 (+11d) | 2025-12-11 → 2025-12-22 (+11d) |  | 21 → 19 |
