# G3.0大功率 Device B

How a schedule from a web Gantt chart changed from version to version. A marks actual dates.

## Version 1 (saved 2025-11-07)

| ID | WBS | Task | Duration | Start | Finish | Predecessors | Complete |
| --- | --- | --- | --- | --- | --- | --- | --- |
| 2 |  | Kick off | 5d | 2024-06-06 | 2024-06-10 |  | 100% |
| 3 |  | MPW 摸底 | 134d | 2024-06-11 | 2024-10-22 | 2 | 100% |
| 4 | 3 | **SPW** | 364d | 2025-01-01 | 2025-12-30 |  | 41% |
| 5 |  | Design & Layout | 4d | 2025-01-01 | 2025-01-04 |  |  |
| 6 | 3.2 | **Formal Qual** | 174d | 2025-07-10 | 2025-12-30 |  | 42% |
| 7 | 3.2.1 | **1st Qaul lot** | 138d | 2025-07-10 | 2025-11-24 |  | 65% |
| 8 |  | Process | 33d | 2025-07-10 | 2025-08-11 |  | 100% |
| 9 |  | PKG | 35d | 2025-08-12 | 2025-09-15 | 8 | 100% |
| 10 |  | FT | 10d | 2025-09-16 | 2025-09-25 | 9 | 100% |
| 11 | 3.2.1.4 | **RE验证** | 57d | 2025-09-26 | 2025-11-21 |  | 58% |
| 12 |  | RE168H | 14d | 2025-09-26 | 2025-10-09 | 10 | 100% |
| 13 |  | RE500H | 19d | 2025-10-10 | 2025-10-28 | 12 | 100% |
| 14 |  | RE1008H | 24d | 2025-10-29 | 2025-11-21 | 13 |  |
| 15 |  | AE验证 | 46d | 2025-10-10 | 2025-11-24 | 12 |  |
| 16 |  | Bench test(DS V0.5) | 20d | 2025-10-10 | 2025-10-29 | 12 | 100% |
| 17 | 3.2.2 | **2nd&3rd Qual lot** | 65d | 2025-10-27 | 2025-12-30 |  | 4% |
| 18 |  | FT | 5d | 2025-10-27 | 2025-10-31 |  | 100% |
| 19 | 3.2.2.2 | **RE 验证** | 57d | 2025-11-01 | 2025-12-27 |  |  |
| 20 |  | RE168H | 14d | 2025-11-01 | 2025-11-14 | 18 |  |
| 21 |  | RE500H | 19d | 2025-11-15 | 2025-12-03 | 20 |  |
| 22 |  | RE1008H | 24d | 2025-12-04 | 2025-12-27 | 21 |  |
| 23 |  | AE验证 | 46d | 2025-11-15 | 2025-12-30 | 20 |  |
| 24 |  | Bench test(DS V0.9) | 15d | 2025-11-15 | 2025-11-29 | 20 |  |
| 25 |  | Ramp up | 90d | 2025-12-28 | 2026-03-27 | 22 |  |
| 26 |  | DS V1.0 | 3d | 2026-03-28 | 2026-03-30 | 25 |  |
| 27 |  | 项目结案 | 1d | 2026-03-31 | 2026-03-31 | 26 |  |

## Version 2 (saved 2025-11-07)

Last finish 2026-03-31 → 2026-04-03 (+3d).

Changed:

| ID | Task | Start | Finish | Duration | Complete | Predecessors |
| --- | --- | --- | --- | --- | --- | --- |
| 4 | **SPW** |  | 2025-12-30 → 2026-01-02 (+3d) | 364d → 367d | 41% → 48% |  |
| 6 | **Formal Qual** |  | 2025-12-30 → 2026-01-02 (+3d) | 174d → 177d | 42% → 48% |  |
| 7 | **1st Qaul lot** |  |  |  | 65% → 76% |  |
| 11 | **RE验证** |  |  |  | 58% → 72% |  |
| 14 | RE1008H |  |  |  | 0% → 33% |  |
| 15 | AE验证 |  |  |  | 0% → 30% |  |
| 17 | **2nd&3rd Qual lot** |  | 2025-12-30 → 2026-01-02 (+3d) | 65d → 68d |  |  |
| 19 | **RE 验证** |  | 2025-12-27 → 2025-12-30 (+3d) | 57d → 60d |  | none → 18 |
| 20 | RE168H |  | 2025-11-14 → 2025-11-17 (+3d) | 14d → 17d |  |  |
| 21 | RE500H | 2025-11-15 → 2025-11-18 (+3d) | 2025-12-03 → 2025-12-06 (+3d) |  |  |  |
| 22 | RE1008H | 2025-12-04 → 2025-12-07 (+3d) | 2025-12-27 → 2025-12-30 (+3d) |  |  |  |
| 23 | AE验证 | 2025-11-15 → 2025-11-18 (+3d) | 2025-12-30 → 2026-01-02 (+3d) |  |  |  |
| 24 | Bench test(DS V0.9) | 2025-11-15 → 2025-11-18 (+3d) | 2025-11-29 → 2025-12-02 (+3d) |  |  |  |
| 25 | Ramp up | 2025-12-28 → 2025-12-31 (+3d) | 2026-03-27 → 2026-03-30 (+3d) |  |  |  |
| 26 | DS V1.0 | 2026-03-28 → 2026-03-31 (+3d) | 2026-03-30 → 2026-04-02 (+3d) |  |  |  |
| 27 | 项目结案 | 2026-03-31 → 2026-04-03 (+3d) | 2026-03-31 → 2026-04-03 (+3d) |  |  |  |

## Version 3 (saved 2025-11-11)

Last finish stays 2026-04-03.

Added:

| ID | Task | Duration | Start | Finish |
| --- | --- | --- | --- | --- |
| 5 | Design & Layout1 | 4d | 2025-01-01 | 2025-01-04 |

Removed: 5 Design & Layout
