# 雷龙

How a schedule from a web Gantt chart changed from version to version. A marks actual dates.

## Version 1 (saved 2025-11-17)

| ID | WBS | Task | Duration | Start | Finish | Predecessors | Complete |
| --- | --- | --- | --- | --- | --- | --- | --- |
| 2 | 1 | **设计** | 40d | 2025-07-17 | 2025-08-25 |  | 100% |
| 3 |  | Kick OFF | 2d | 2025-07-17 | 2025-07-18 |  | 100% |
| 4 |  | PDK layout | 7d | 2025-07-17 | 2025-07-23 |  | 100% |
| 5 |  | CP probe card--悬臂针 | 33d | 2025-07-17 | 2025-08-18 |  | 100% |
| 6 |  | CP probe card--垂直针 | 40d | 2025-07-17 | 2025-08-25 |  | 100% |
| 7 | 2 | **摸底研究** | 60d | 2025-07-28 | 2025-09-25 |  | 100% |
| 8 | 2.1 | **ZH 摸底** | 60d | 2025-07-28 | 2025-09-25 |  | 100% |
| 9 |  | WAFER PROCESS | 14d | 2025-07-28 | 2025-08-10 |  | 100% |
| 10 |  | PKG | 30d | 2025-08-12 | 2025-09-10 |  | 100% |
| 11 |  | FT | 2d | 2025-09-11 | 2025-09-12 |  | 100% |
| 12 |  | AE 测试 | 13d | 2025-09-13 | 2025-09-25 |  | 100% |
| 13 | 2.2 | **Suz 摸底** | 59d | 2025-07-29 | 2025-09-25 |  | 100% |
| 14 |  | Wafer process | 18d | 2025-07-29 | 2025-08-15 |  | 100% |
| 15 |  | PKG | 23d | 2025-08-19 | 2025-09-10 |  | 100% |
| 16 |  | FT | 2d | 2025-09-11 | 2025-09-12 |  | 100% |
| 17 |  | AE 测试 | 14d | 2025-09-12 | 2025-09-25 |  | 100% |
| 18 | 3 | **pre qual. lot** | 135d | 2025-08-20 | 2026-01-01 |  | 38% |
| 19 |  | WAFER PROCESS | 17d | 2025-08-20 | 2025-09-05 |  | 100% |
| 20 |  | CP test | 14d | 2025-09-06 | 2025-09-19 | 19 | 100% |
| 21 |  | PKG | 23d | 2025-09-25 | 2025-10-17 |  | 100% |
| 22 |  | FT | 6d | 2025-10-18 | 2025-10-23 | 21 | 100% |
| 23 |  | RE 168H | 15d | 2025-10-23 | 2025-11-06 |  | 10% |
| 24 |  | RE 1000H | 70d | 2025-10-24 | 2026-01-01 | 22 |  |
| 25 |  | PE bench test | 16d | 2025-10-24 | 2025-11-08 | 22 |  |
| 26 | 4 | **1st Qual. lot** | 103d | 2025-10-23 | 2026-02-02 |  | 2% |
| 27 |  | CP | 3d | 2025-10-23 | 2025-10-25 |  | 100% |
| 28 |  | PKG+FT | 23d | 2025-10-26 | 2025-11-17 | 27 |  |
| 29 |  | CSR | 7d | 2025-11-18 | 2025-11-24 | 28 |  |
| 30 |  | D-RON | 7d | 2025-11-18 | 2025-11-24 | 28 |  |
| 31 |  | PE bench test | 9d | 2025-11-18 | 2025-11-26 | 28 |  |
| 32 |  | RE 168H | 77d | 2025-11-18 | 2026-02-02 | 28 |  |
| 33 |  | RE 1000H | 65d | 2025-11-18 | 2026-01-21 | 28 |  |
| 34 | 5 | **2nd/3rd Qual. lot** | 123d | 2025-10-23 | 2026-02-22 |  | 33% |
| 35 |  | WAFER PROCESS | 19d | 2025-10-23 | 2025-11-10 |  | 100% |
| 36 |  | CP test | 7d | 2025-11-11 | 2025-11-17 | 35 | 100% |
| 37 |  | PKG+FT | 25d | 2025-11-18 | 2025-12-12 | 36 | 73% |
| 38 |  | CSR | 1d | 2025-12-13 | 2025-12-13 | 37 |  |
| 39 |  | PE Bench test | 9d | 2025-12-13 | 2025-12-21 | 37 |  |
| 40 |  | RE 1000H | 72d | 2025-12-13 | 2026-02-22 | 37 |  |
| 41 | 6 | **Window lot** | 66d | 2025-10-28 | 2026-01-01 |  |  |
| 42 |  | WAFER PRCESS | 24d | 2025-10-28 | 2025-11-20 |  |  |
| 43 |  | CP test | 7d | 2025-11-21 | 2025-11-27 | 42 |  |
| 44 |  | PKG+FT | 26d | 2025-11-28 | 2025-12-23 | 43 |  |
| 45 |  | CSR | 9d | 2025-12-24 | 2026-01-01 | 44 |  |
| 46 |  | PE bench | 1d | 2025-12-24 | 2025-12-24 | 44 |  |

## Version 2 (saved 2025-11-24)

Last finish stays 2026-02-22.

Changed:

| ID | Task | Start | Finish | Duration | Complete |
| --- | --- | --- | --- | --- | --- |
| 26 | **1st Qual. lot** |  | 2026-02-02 → 2026-02-16 (+14d) | 103d → 117d | 2% → 1% |
| 28 | PKG+FT |  | 2025-11-17 → 2025-12-01 (+14d) | 23d → 37d |  |
| 29 | CSR | 2025-11-18 → 2025-12-02 (+14d) | 2025-11-24 → 2025-12-08 (+14d) |  |  |
| 30 | D-RON | 2025-11-18 → 2025-12-02 (+14d) | 2025-11-24 → 2025-12-08 (+14d) |  |  |
| 31 | PE bench test | 2025-11-18 → 2025-12-02 (+14d) | 2025-11-26 → 2025-12-10 (+14d) |  |  |
| 32 | RE 168H | 2025-11-18 → 2025-12-02 (+14d) | 2026-02-02 → 2026-02-16 (+14d) |  |  |
| 33 | RE 1000H | 2025-11-18 → 2025-12-02 (+14d) | 2026-01-21 → 2026-02-04 (+14d) |  |  |

## Version 3 (saved 2025-12-08)

Last finish 2026-02-22 → 2026-02-28 (+6d).

Changed:

| ID | Task | Start | Finish | Duration | Complete |
| --- | --- | --- | --- | --- | --- |
| 26 | **1st Qual. lot** |  | 2026-02-16 → 2026-02-11 (-5d) | 117d → 112d | 1% → 2% |
| 28 | PKG+FT |  | 2025-12-01 → 2025-12-08 (+7d) | 37d → 44d |  |
| 29 | CSR | 2025-12-02 → 2025-12-09 (+7d) | 2025-12-08 → 2025-12-15 (+7d) |  |  |
| 30 | D-RON | 2025-12-02 → 2025-12-09 (+7d) | 2025-12-08 → 2025-12-15 (+7d) |  |  |
| 31 | PE bench test | 2025-12-02 → 2025-12-09 (+7d) | 2025-12-10 → 2025-12-17 (+7d) |  |  |
| 32 | RE 168H | 2025-12-02 → 2025-12-09 (+7d) | 2026-02-16 → 2025-12-26 (-52d) | 77d → 18d |  |
| 33 | RE 1000H | 2025-12-02 → 2025-12-09 (+7d) | 2026-02-04 → 2026-02-11 (+7d) |  |  |
| 34 | **2nd/3rd Qual. lot** |  | 2026-02-22 → 2026-02-28 (+6d) | 123d → 129d | 33% → 43% |
| 36 | CP test |  | 2025-11-17 → 2025-12-03 (+16d) | 7d → 23d |  |
| 37 | PKG+FT | 2025-11-18 → 2025-12-04 (+16d) | 2025-12-12 → 2025-12-28 (+16d) |  |  |
| 38 | CSR | 2025-12-13 → 2025-12-29 (+16d) | 2025-12-13 → 2025-12-29 (+16d) |  |  |
| 39 | PE Bench test | 2025-12-13 → 2025-12-29 (+16d) | 2025-12-21 → 2026-01-06 (+16d) |  |  |
| 40 | RE 1000H | 2025-12-13 → 2025-12-29 (+16d) | 2026-02-22 → 2026-02-28 (+6d) | 72d → 62d |  |

## Version 4 (saved 2025-12-15)

Last finish stays 2026-02-28.

Changed:

| ID | Task | Finish | Duration |
| --- | --- | --- | --- |
| 30 | D-RON | 2025-12-15 → 2025-12-19 (+4d) | 7d → 11d |
| 31 | PE bench test | 2025-12-17 → 2025-12-26 (+9d) | 9d → 18d |

## Version 5 (saved 2025-12-22)

Last finish stays 2026-02-28. Complete tasks 19 → 20.

Removed: 26 1st Qual. lot; 27 CP; 28 PKG+FT; 29 CSR; 30 D-RON; 31 PE bench test; 32 RE 168H; 33 RE 1000H

Changed:

| ID | Task | Complete |
| --- | --- | --- |
| 18 | **pre qual. lot** | 38% → 57% |
| 23 | RE 168H | 10% → 100% |
| 25 | PE bench test | 0% → 100% |

## Version 6 (saved 2026-01-05)

Last finish 2026-02-28 → 2026-03-15 (+15d). Complete tasks 20 → 21.

Removed: 33 Window lot; 34 WAFER PRCESS; 35 CP test; 36 PKG+FT; 37 CSR; 38 PE bench

Changed:

| ID | Task | Start | Finish | Duration | Complete |
| --- | --- | --- | --- | --- | --- |
| 24 | RE 1000H |  |  |  | 0% → 100% |
| 26 | **2nd/3rd Qual. lot** |  | 2026-02-28 → 2026-03-15 (+15d) | 129d → 144d | 43% → 46% |
| 29 | PKG+FT |  | 2025-12-28 → 2026-01-12 (+15d) | 25d → 40d |  |
| 30 | CSR | 2025-12-29 → 2026-01-13 (+15d) | 2025-12-29 → 2026-01-13 (+15d) |  |  |
| 31 | PE Bench test | 2025-12-29 → 2026-01-13 (+15d) | 2026-01-06 → 2026-01-21 (+15d) |  |  |
| 32 | RE 1000H | 2025-12-29 → 2026-01-13 (+15d) | 2026-02-28 → 2026-03-15 (+15d) |  |  |

## Version 7 (saved 2026-01-13)

Last finish stays 2026-03-15.

Changed:

| ID | Task | Complete |
| --- | --- | --- |
| 18 | **pre qual. lot** | 57% → 100% |
