# 雷龙

How a schedule from a web Gantt chart changed from version to version. A marks actual dates.

## Version 1 (saved 2025-10-27)

| ID | WBS | Task | Duration | Start | Finish | Predecessors | Complete |
| --- | --- | --- | --- | --- | --- | --- | --- |
| 2 | 1 | **设计** | 40d | 2025-07-17 | 2025-08-25 |  | 100% |
| 3 |  | Kick OFF | 2d | 2025-07-17 | 2025-07-18 |  | 100% |
| 4 |  | PDK layout | 7d | 2025-07-17 | 2025-07-23 |  | 100% |
| 5 |  | CP probe card--悬臂针 | 33d | 2025-07-17 | 2025-08-18 |  | 100% |
| 6 |  | CP probe card--垂直针 | 40d | 2025-07-17 | 2025-08-25 |  | 100% |
| 7 | 2 | **摸底研究** | 60d | 2025-07-28 | 2025-09-25 |  | 100% |
| 8 | 2.1 | **ZH 摸底** | 60d | 2025-07-28 | 2025-09-25 |  | 100% |
| 9 |  | WAFER PROCESS | 14d | 2025-07-28 | 2025-08-10 |  | 100% |
| 10 |  | PKG | 30d | 2025-08-12 | 2025-09-10 |  | 100% |
| 11 |  | FT | 2d | 2025-09-11 | 2025-09-12 |  | 100% |
| 12 |  | AE 测试 | 13d | 2025-09-13 | 2025-09-25 |  | 100% |
| 13 | 2.2 | **Suz 摸底** | 59d | 2025-07-29 | 2025-09-25 |  | 100% |
| 14 |  | Wafer process | 18d | 2025-07-29 | 2025-08-15 |  | 100% |
| 15 |  | PKG | 23d | 2025-08-19 | 2025-09-10 |  | 100% |
| 16 |  | FT | 2d | 2025-09-11 | 2025-09-12 |  | 100% |
| 17 |  | AE 测试 | 14d | 2025-09-12 | 2025-09-25 |  | 100% |
| 18 | 3 | **1st qual. lot** | 134d | 2025-08-20 | 2025-12-31 |  | 35% |
| 19 |  | WAFER PROCESS | 17d | 2025-08-20 | 2025-09-05 |  | 100% |
| 20 |  | CP test | 14d | 2025-09-06 | 2025-09-19 | 19 | 100% |
| 21 |  | PKG | 23d | 2025-09-25 | 2025-10-17 |  | 73% |
| 22 |  | FT | 5d | 2025-10-18 | 2025-10-22 | 21 |  |
| 23 |  | RE qual. | 70d | 2025-10-23 | 2025-12-31 | 22 |  |
| 24 |  | PE bench test | 9d | 2025-10-23 | 2025-10-31 | 22 |  |
| 25 | 4 | **2nd qual. lot** | 134d | 2025-08-20 | 2025-12-31 |  | 35% |
| 26 |  | WAFER PROCESS | 17d | 2025-08-20 | 2025-09-05 |  | 100% |
| 27 |  | CP test | 14d | 2025-09-06 | 2025-09-19 | 26 | 100% |
| 28 |  | PKG | 23d | 2025-09-25 | 2025-10-17 |  | 73% |
| 29 |  | FT | 5d | 2025-10-18 | 2025-10-22 | 28 |  |
| 30 |  | RE qual. | 70d | 2025-10-23 | 2025-12-31 | 29 |  |
| 31 |  | PE Bench test | 9d | 2025-10-23 | 2025-10-31 | 29 |  |
| 32 | 5 | **3rd Qual. lot** | 134d | 2025-08-20 | 2025-12-31 |  | 35% |
| 33 |  | WAFER PRCESS | 17d | 2025-08-20 | 2025-09-05 |  | 100% |
| 34 |  | CP test | 14d | 2025-09-06 | 2025-09-19 | 33 | 100% |
| 35 |  | PKG | 23d | 2025-09-25 | 2025-10-17 |  | 73% |
| 36 |  | FT | 5d | 2025-10-18 | 2025-10-22 | 35 |  |
| 37 |  | RE qual. | 70d | 2025-10-23 | 2025-12-31 | 36 |  |
| 38 |  | PE bench test | 9d | 2025-10-23 | 2025-10-31 | 36 |  |

## Version 2 (saved 2025-10-27)

Last finish 2025-12-31 → 2026-02-06 (+37d).

Added:

| ID | Task | Duration | Start | Finish |
| --- | --- | --- | --- | --- |
| 18 | **pre qual. lot** | 134d | 2025-08-20 | 2025-12-31 |
| 25 | **1st Qual. lot** | 93d | 2025-10-23 | 2026-01-23 |
| 26 | CP | 6d | 2025-10-23 | 2025-10-28 |
| 27 | PKG+FT | 30d | 2025-10-29 | 2025-11-27 |
| 28 | RE qual. | 58d | 2025-11-27 | 2026-01-23 |
| 29 | PE bench test | 9d | 2025-11-27 | 2025-12-05 |
| 30 | **2nd Qual. lot** | 107d | 2025-10-23 | 2026-02-06 |

Removed: 18 1st qual. lot; 25 2nd qual. lot

Changed:

| ID | Task | Start | Finish | Duration | Complete |
| --- | --- | --- | --- | --- | --- |
| 31 | WAFER PROCESS | 2025-08-20 → 2025-10-23 (+64d) | 2025-09-05 → 2025-11-08 (+64d) |  |  |
| 32 | CP test | 2025-09-06 → 2025-11-09 (+64d) | 2025-09-19 → 2025-11-22 (+64d) |  |  |
| 33 | PKG | 2025-09-25 → 2025-11-23 (+59d) | 2025-10-17 → 2025-12-15 (+59d) |  |  |
| 34 | FT | 2025-10-18 → 2025-12-16 (+59d) | 2025-10-22 → 2025-12-20 (+59d) |  |  |
| 35 | RE qual. | 2025-10-23 → 2025-12-21 (+59d) | 2025-12-31 → 2026-02-06 (+37d) | 70d → 48d |  |
| 36 | PE Bench test | 2025-10-23 → 2025-12-21 (+59d) | 2025-10-31 → 2025-12-29 (+59d) |  |  |
| 37 | **3rd Qual. lot** | 2025-08-20 → 2025-10-23 (+64d) | 2025-12-31 → 2026-01-23 (+23d) | 134d → 93d | 35% → 46% |
| 38 | WAFER PRCESS | 2025-08-20 → 2025-10-23 (+64d) | 2025-09-05 → 2025-11-08 (+64d) |  |  |
| 39 | CP test | 2025-09-06 → 2025-11-09 (+64d) | 2025-09-19 → 2025-11-22 (+64d) |  |  |
| 40 | PKG | 2025-09-25 → 2025-11-22 (+58d) | 2025-10-17 → 2025-12-14 (+58d) |  |  |
| 41 | FT | 2025-10-18 → 2025-12-15 (+58d) | 2025-10-22 → 2025-12-19 (+58d) |  |  |
| 42 | RE qual. | 2025-10-23 → 2025-12-20 (+58d) | 2025-12-31 → 2026-01-23 (+23d) | 70d → 35d |  |
| 43 | PE bench test | 2025-10-23 → 2025-12-20 (+58d) | 2025-10-31 → 2025-12-28 (+58d) |  |  |

## Version 3 (saved 2025-10-28)

Last finish 2026-02-06 → 2026-02-22 (+16d). Complete tasks 18 → 19.

Added:

| ID | Task | Duration | Start | Finish | Predecessors |
| --- | --- | --- | --- | --- | --- |
| 23 | RE 168H | 15d | 2025-10-23 | 2025-11-06 |  |
| 24 | RE 1000H | 70d | 2025-10-23 | 2025-12-31 | 22 |
| 29 | CSR | 7d | 2025-11-18 | 2025-11-24 | 28 |
| 30 | D-RON | 7d | 2025-11-18 | 2025-11-24 | 28 |
| 32 | RE 168H | 77d | 2025-11-18 | 2026-02-02 | 28 |
| 33 | RE 1000H | 65d | 2025-11-18 | 2026-01-21 | 28 |
| 34 | **2nd/3rd Qual. lot** | 123d | 2025-10-23 | 2026-02-22 |  |
| 37 | PKG+FT | 25d | 2025-11-18 | 2025-12-12 | 36 |
| 38 | CSR | 1d | 2025-12-13 | 2025-12-13 | 37 |
| 40 | RE 1000H | 72d | 2025-12-13 | 2026-02-22 | 37 |
| 41 | **Window lot** | 66d | 2025-10-28 | 2026-01-01 |  |
| 44 | PKG+FT | 26d | 2025-11-28 | 2025-12-23 | 43 |
| 45 | CSR | 9d | 2025-12-24 | 2026-01-01 | 44 |
| 46 | PE bench | 1d | 2025-12-24 | 2025-12-24 | 44 |

Removed: 23 RE qual.; 28 RE qual.; 30 2nd Qual. lot; 33 PKG; 34 FT; 35 RE qual.; 37 3rd Qual. lot; 40 PKG; 41 FT; 42 RE qual.; 43 PE bench test

Changed:

| ID | Task | Start | Finish | Duration | Complete | Predecessors |
| --- | --- | --- | --- | --- | --- | --- |
| 18 | **pre qual. lot** |  |  |  | 35% → 40% |  |
| 21 | PKG |  |  |  | 73% → 100% |  |
| 22 | FT |  |  |  | 0% → 100% |  |
| 26 | **1st Qual. lot** |  | 2026-01-23 → 2026-02-02 (+10d) | 93d → 103d | 0% → 2% |  |
| 27 | CP |  | 2025-10-28 → 2025-10-25 (-3d) | 6d → 3d | 0% → 100% |  |
| 28 | PKG+FT | 2025-10-29 → 2025-10-26 (-3d) | 2025-11-27 → 2025-11-17 (-10d) | 30d → 23d |  | none → 27 |
| 31 | PE bench test | 2025-11-27 → 2025-11-18 (-9d) | 2025-12-05 → 2025-11-26 (-9d) |  |  | none → 28 |
| 35 | WAFER PROCESS |  | 2025-11-08 → 2025-11-10 (+2d) | 17d → 19d |  |  |
| 36 | CP test | 2025-11-09 → 2025-11-11 (+2d) | 2025-11-22 → 2025-11-17 (-5d) | 14d → 7d |  |  |
| 39 | PE Bench test | 2025-12-21 → 2025-12-13 (-8d) | 2025-12-29 → 2025-12-21 (-8d) |  |  | FT → 37 |
| 42 | WAFER PRCESS | 2025-10-23 → 2025-10-28 (+5d) | 2025-11-08 → 2025-11-20 (+12d) | 17d → 24d | 100% → 0% |  |
| 43 | CP test | 2025-11-09 → 2025-11-21 (+12d) | 2025-11-22 → 2025-11-27 (+5d) | 14d → 7d | 100% → 0% |  |
