# 雷龙

How a schedule from a web Gantt chart changed from version to version. A marks actual dates.

## Version 1 (saved 2025-11-03)

| ID | WBS | Task | Duration | Start | Finish | Predecessors | Complete |
| --- | --- | --- | --- | --- | --- | --- | --- |
| 2 | 1 | **设计** | 40d | 2025-07-17 | 2025-08-25 |  | 100% |
| 3 |  | Kick OFF | 2d | 2025-07-17 | 2025-07-18 |  | 100% |
| 4 |  | PDK layout | 7d | 2025-07-17 | 2025-07-23 |  | 100% |
| 5 |  | CP probe card--悬臂针 | 33d | 2025-07-17 | 2025-08-18 |  | 100% |
| 6 |  | CP probe card--垂直针 | 40d | 2025-07-17 | 2025-08-25 |  | 100% |
| 7 | 2 | **摸底研究** | 60d | 2025-07-28 | 2025-09-25 |  | 100% |
| 8 | 2.1 | **ZH 摸底** | 60d | 2025-07-28 | 2025-09-25 |  | 100% |
| 9 |  | WAFER PROCESS | 14d | 2025-07-28 | 2025-08-10 |  | 100% |
| 10 |  | PKG | 30d | 2025-08-12 | 2025-09-10 |  | 100% |
| 11 |  | FT | 2d | 2025-09-11 | 2025-09-12 |  | 100% |
| 12 |  | AE 测试 | 13d | 2025-09-13 | 2025-09-25 |  | 100% |
| 13 | 2.2 | **Suz 摸底** | 59d | 2025-07-29 | 2025-09-25 |  | 100% |
| 14 |  | Wafer process | 18d | 2025-07-29 | 2025-08-15 |  | 100% |
| 15 |  | PKG | 23d | 2025-08-19 | 2025-09-10 |  | 100% |
| 16 |  | FT | 2d | 2025-09-11 | 2025-09-12 |  | 100% |
| 17 |  | AE 测试 | 14d | 2025-09-12 | 2025-09-25 |  | 100% |
| 18 | 3 | **pre qual. lot** | 134d | 2025-08-20 | 2025-12-31 |  | 38% |
| 19 |  | WAFER PROCESS | 17d | 2025-08-20 | 2025-09-05 |  | 100% |
| 20 |  | CP test | 14d | 2025-09-06 | 2025-09-19 | 19 | 100% |
| 21 |  | PKG | 23d | 2025-09-25 | 2025-10-17 |  | 100% |
| 22 |  | FT | 5d | 2025-10-18 | 2025-10-22 | 21 | 100% |
| 23 |  | RE 168H | 15d | 2025-10-23 | 2025-11-06 |  | 10% |
| 24 |  | RE 1000H | 70d | 2025-10-23 | 2025-12-31 | 22 |  |
| 25 |  | PE bench test | 16d | 2025-10-23 | 2025-11-07 | 22 |  |
| 26 | 4 | **1st Qual. lot** | 103d | 2025-10-23 | 2026-02-02 |  | 2% |
| 27 |  | CP | 3d | 2025-10-23 | 2025-10-25 |  | 100% |
| 28 |  | PKG+FT | 23d | 2025-10-26 | 2025-11-17 | 27 |  |
| 29 |  | CSR | 7d | 2025-11-18 | 2025-11-24 | 28 |  |
| 30 |  | D-RON | 7d | 2025-11-18 | 2025-11-24 | 28 |  |
| 31 |  | PE bench test | 9d | 2025-11-18 | 2025-11-26 | 28 |  |
| 32 |  | RE 168H | 77d | 2025-11-18 | 2026-02-02 | 28 |  |
| 33 |  | RE 1000H | 65d | 2025-11-18 | 2026-01-21 | 28 |  |
| 34 | 5 | **2nd/3rd Qual. lot** | 123d | 2025-10-23 | 2026-02-22 |  | 33% |
| 35 |  | WAFER PROCESS | 19d | 2025-10-23 | 2025-11-10 |  | 100% |
| 36 |  | CP test | 7d | 2025-11-11 | 2025-11-17 | 35 | 100% |
| 37 |  | PKG+FT | 25d | 2025-11-18 | 2025-12-12 | 36 | 73% |
| 38 |  | CSR | 1d | 2025-12-13 | 2025-12-13 | 37 |  |
| 39 |  | PE Bench test | 9d | 2025-12-13 | 2025-12-21 | 37 |  |
| 40 |  | RE 1000H | 72d | 2025-12-13 | 2026-02-22 | 37 |  |
| 41 | 6 | **Window lot** | 66d | 2025-10-28 | 2026-01-01 |  |  |
| 42 |  | WAFER PRCESS | 24d | 2025-10-28 | 2025-11-20 |  |  |
| 43 |  | CP test | 7d | 2025-11-21 | 2025-11-27 | 42 |  |
| 44 |  | PKG+FT | 26d | 2025-11-28 | 2025-12-23 | 43 |  |
| 45 |  | CSR | 9d | 2025-12-24 | 2026-01-01 | 44 |  |
| 46 |  | PE bench | 1d | 2025-12-24 | 2025-12-24 | 44 |  |

## Version 2 (saved 2025-11-03)

Last finish stays 2026-02-22.

Changed:

| ID | Task | Finish | Duration | Complete |
| --- | --- | --- | --- | --- |
| 18 | **pre qual. lot** |  |  | 38% → 40% |
| 25 | PE bench test | 2025-11-07 → 2025-10-31 (-7d) | 16d → 9d |  |

## Version 3 (saved 2025-11-03)

Last finish stays 2026-02-22.

Changed:

| ID | Task | Finish | Duration | Complete |
| --- | --- | --- | --- | --- |
| 18 | **pre qual. lot** |  |  | 40% → 38% |
| 25 | PE bench test | 2025-10-31 → 2025-11-07 (+7d) | 9d → 16d |  |

## Version 4 (saved 2025-11-03)

Last finish stays 2026-02-22.

Changed:

| ID | Task | Start | Finish | Duration | Complete |
| --- | --- | --- | --- | --- | --- |
| 18 | **pre qual. lot** |  | 2025-12-31 → 2026-01-09 (+9d) | 134d → 143d | 38% → 41% |
| 22 | FT |  | 2025-10-22 → 2025-10-31 (+9d) | 5d → 14d |  |
| 24 | RE 1000H | 2025-10-23 → 2025-11-01 (+9d) | 2025-12-31 → 2026-01-09 (+9d) |  |  |
| 25 | PE bench test | 2025-10-23 → 2025-11-01 (+9d) | 2025-11-07 → 2025-11-16 (+9d) |  |  |

## Version 5 (saved 2025-11-03)

Last finish stays 2026-02-22.

Changed:

| ID | Task | Start | Finish | Duration | Complete |
| --- | --- | --- | --- | --- | --- |
| 18 | **pre qual. lot** |  | 2026-01-09 → 2025-12-31 (-9d) | 143d → 134d | 41% → 38% |
| 22 | FT |  | 2025-10-31 → 2025-10-22 (-9d) | 14d → 5d |  |
| 24 | RE 1000H | 2025-11-01 → 2025-10-23 (-9d) | 2026-01-09 → 2025-12-31 (-9d) |  |  |
| 25 | PE bench test | 2025-11-01 → 2025-10-23 (-9d) | 2025-11-16 → 2025-11-07 (-9d) |  |  |

## Version 6 (saved 2025-11-03)

Last finish stays 2026-02-22.

Changed:

| ID | Task | Start | Finish | Duration | Complete |
| --- | --- | --- | --- | --- | --- |
| 18 | **pre qual. lot** |  | 2025-12-31 → 2026-01-01 (+1d) | 134d → 135d | 38% → 39% |
| 22 | FT |  | 2025-10-22 → 2025-10-23 (+1d) | 5d → 6d |  |
| 24 | RE 1000H | 2025-10-23 → 2025-10-24 (+1d) | 2025-12-31 → 2026-01-01 (+1d) |  |  |
| 25 | PE bench test | 2025-10-23 → 2025-10-24 (+1d) | 2025-11-07 → 2025-11-08 (+1d) |  |  |
