# 雷龙

How a schedule from a web Gantt chart changed from version to version. A marks actual dates.

## Version 1 (saved 2025-10-13)

| ID | WBS | Task | Duration | Start | Finish | Predecessors | Complete |
| --- | --- | --- | --- | --- | --- | --- | --- |
| 2 | 1 | **设计** | 40d | 2025-07-17 | 2025-08-25 |  | 100% |
| 3 |  | Kick OFF | 2d | 2025-07-17 | 2025-07-18 |  | 100% |
| 4 |  | PDK layout | 7d | 2025-07-17 | 2025-07-23 |  | 100% |
| 5 |  | CP probe card--悬臂针 | 33d | 2025-07-17 | 2025-08-18 |  | 100% |
| 6 |  | CP probe card--垂直针 | 40d | 2025-07-17 | 2025-08-25 |  | 100% |
| 7 | 2 | **摸底研究** | 111d | 2025-07-28 | 2025-11-15 |  | 100% |
| 8 | 2.1 | **ZH 摸底** | 111d | 2025-07-28 | 2025-11-15 |  | 100% |
| 9 |  | WAFER PROCESS | 14d | 2025-07-28 | 2025-08-10 |  | 100% |
| 10 |  | PKG | 30d | 2025-08-12 | 2025-09-10 |  | 100% |
| 11 |  | FT | 2d | 2025-09-11 | 2025-09-12 |  | 100% |
| 12 |  | AE 测试 | 64d | 2025-09-13 | 2025-11-15 |  | 100% |
| 13 | 2.2 | **Suz 摸底** | 59d | 2025-07-29 | 2025-09-25 |  | 100% |
| 14 |  | Wafer process | 18d | 2025-07-29 | 2025-08-15 |  | 100% |
| 15 |  | PKG | 23d | 2025-08-19 | 2025-09-10 |  | 100% |
| 16 |  | FT | 2d | 2025-09-11 | 2025-09-12 |  | 100% |
| 17 |  | AE 测试 | 14d | 2025-09-12 | 2025-09-25 |  | 100% |
| 18 | 3 | **1st qual. lot** | 134d | 2025-08-20 | 2025-12-31 |  | 35% |
| 19 |  | WAFER PROCESS | 17d | 2025-08-20 | 2025-09-05 |  | 100% |
| 20 |  | CP test | 14d | 2025-09-06 | 2025-09-19 | 19 | 100% |
| 21 |  | PKG | 23d | 2025-09-25 | 2025-10-17 |  | 73% |
| 22 |  | FT | 5d | 2025-10-18 | 2025-10-22 | 21 |  |
| 23 |  | RE qual. | 70d | 2025-10-23 | 2025-12-31 | 22 |  |
| 24 |  | PE bench test | 9d | 2025-10-23 | 2025-10-31 | 22 |  |
| 25 | 4 | **2nd qual. lot** | 134d | 2025-08-20 | 2025-12-31 |  | 35% |
| 26 |  | WAFER PROCESS | 17d | 2025-08-20 | 2025-09-05 |  | 100% |
| 27 |  | CP test | 14d | 2025-09-06 | 2025-09-19 | 26 | 100% |
| 28 |  | PKG | 23d | 2025-09-25 | 2025-10-17 |  | 73% |
| 29 |  | FT | 5d | 2025-10-18 | 2025-10-22 | 28 |  |
| 30 |  | RE qual. | 70d | 2025-10-23 | 2025-12-31 | 29 |  |
| 31 |  | PE Bench test | 9d | 2025-10-23 | 2025-10-31 | 29 |  |
| 32 | 5 | **3rd Qual. lot** | 134d | 2025-08-20 | 2025-12-31 |  | 35% |
| 33 |  | WAFER PRCESS | 17d | 2025-08-20 | 2025-09-05 |  | 100% |
| 34 |  | CP test | 14d | 2025-09-06 | 2025-09-19 | 33 | 100% |
| 35 |  | PKG | 23d | 2025-09-25 | 2025-10-17 |  | 73% |
| 36 |  | FT | 5d | 2025-10-18 | 2025-10-22 | 35 |  |
| 37 |  | RE qual. | 70d | 2025-10-23 | 2025-12-31 | 36 |  |
| 38 |  | PE bench test | 9d | 2025-10-23 | 2025-10-31 | 36 |  |

## Version 2 (saved 2025-10-13)

Last finish stays 2025-12-31.

Changed:

| ID | Task | Finish | Duration |
| --- | --- | --- | --- |
| 7 | **摸底研究** | 2025-11-15 → 2025-09-25 (-51d) | 111d → 60d |
| 8 | **ZH 摸底** | 2025-11-15 → 2025-09-25 (-51d) | 111d → 60d |
| 12 | AE 测试 | 2025-11-15 → 2025-09-25 (-51d) | 64d → 13d |
